# ABP Planificacion

Schedule from MS Project, 2018-09-10 to 2019-05-06, status date 2019-02-08, costs in €, A marks actual dates.

## Calendars

- Estándar: Mon-Fri 09:00-13:00, 15:00-19:00; Sat-Sun off.

## Resources

| Resource | Rate | Cost per use |
| --- | --- | --- |
| Débora Galdeano González | 22 | 22 |
| Marines Ánton Castelló | 18 | 18 |
| María Sánchez Marqués | 20 | 20 |
| Jose Ramon Barea Cecilia | 20 | 20 |
| David Ramón Sevilla | 18 | 18 |
| Jose Vicente Anton Coy | 18 | 18 |
| Todos |  |  |

## Schedule

| ID | WBS | Task | Type | Duration | Start | Finish | Predecessors | Complete | Remaining | Baseline start | Baseline finish | Baseline duration | Total slack | Free slack | Constraint | Resources | Work | Actual work | Cost | Baseline cost | Actual cost | Horas Estimadas |
| --- | --- | --- | --- | --- | --- | --- | --- | --- | --- | --- | --- | --- | --- | --- | --- | --- | --- | --- | --- | --- | --- | --- |
| 1 | 1 | **Hito 0** |  | 22.2d | 2018-09-10 09:00 A | 2018-10-10 10:36 A |  | 100% |  | 2018-09-10 09:00 | 2018-10-10 10:36 | 22.2d |  |  |  |  |  |  |  |  |  |  |
| 2 | 1.1 | **Iteracion 1** |  | 16.2d | 2018-09-10 09:00 A | 2018-10-02 10:36 A |  | 100% |  | 2018-09-10 09:00 | 2018-10-02 10:36 | 16.2d |  |  |  |  |  |  |  |  |  |  |
| 3 | 1.1.1 | [PM]Rellenar documento de Concepto del proyecto |  | 9.6h | 2018-09-10 09:00 A | 2018-09-11 10:36 A |  | 100% |  | 2018-09-10 09:00 | 2018-09-11 10:36 | 9.6h |  |  | start no earlier than 2018-09-10 09:00 |  |  |  |  |  |  |  |
| 4 | 1.1.2 | [PM]Rellenar Version inicial del documento Especificacion |  | 9.6h | 2018-10-01 09:00 A | 2018-10-02 10:36 A |  | 100% |  | 2018-10-01 09:00 | 2018-10-02 10:36 | 9.6h |  |  |  |  |  |  |  |  |  |  |
| 5 | 1.2 | **Iteracion 2** |  | 7.2d | 2018-10-01 09:00 A | 2018-10-10 10:36 A |  | 100% |  | 2018-10-01 09:00 | 2018-10-10 10:36 | 7.2d |  |  |  |  |  |  |  |  |  |  |
| 6 | 1.2.1 | [PM]Completar y Revisar documento Especificacion |  | 9.6h | 2018-10-01 09:00 A | 2018-10-02 10:36 A |  | 100% |  | 2018-10-01 09:00 | 2018-10-02 10:36 | 9.6h |  |  |  |  |  |  |  |  |  |  |
| 7 | 1.2.2 | [PM]Crear WBS del proyecto project |  | 28.8h | 2018-10-01 09:00 A | 2018-10-04 15:48 A |  | 100% |  | 2018-10-01 09:00 | 2018-10-04 15:48 | 28.8h |  |  |  |  |  |  |  |  |  |  |
| 8 | 1.2.3 | [PM]Crear plan general (tareas y precedencias basicas) en project |  | 28.8h | 2018-10-01 09:00 A | 2018-10-04 15:48 A |  | 100% |  | 2018-10-01 09:00 | 2018-10-04 15:48 | 28.8h |  |  |  |  |  |  |  |  |  |  |
| 9 | 1.2.4 | [PM]Elaborar el Presupuesto(hoja de calculo) |  | 57.6h | 2018-10-01 09:00 A | 2018-10-10 10:36 A |  | 100% |  | 2018-10-01 09:00 | 2018-10-10 10:36 | 57.6h |  |  |  |  |  |  |  |  |  |  |
| 10 | 2 | Documento de Especificaciones realizado | milestone | 0d | 2018-10-10 10:36 A | 2018-10-10 10:36 A | 1 | 100% |  | 2018-10-10 10:36 | 2018-10-10 10:36 | 0d |  |  | start no earlier than 2018-10-10 09:00 |  |  |  |  |  |  |  |
| 11 | 3 | **Hito 1** |  | 60d | 2018-10-01 09:00 A | 2018-12-21 19:00 |  | 75% | 14.97d | 2018-10-01 09:00 | 2018-12-21 19:00 | 60d | 96d | 0d |  |  | 664.85h | 523.16h | 13,917.74 | 13,917.74 | 11,141.17 |  |
| 12 | 3.1 | **Iteracion 3** |  | 10d | 2018-10-11 09:00 A | 2018-10-24 19:00 |  | 70% | 3.03d | 2018-10-11 09:00 | 2018-10-24 19:00 | 10d | 0d |  | start no earlier than 2018-10-11 09:00 |  | 81.31h | 54.67h | 1,700.68 | 1,700.68 | 1,189.96 |  |
| 13 | 3.1.1 | [V1]Documento de diseño de mecánicas de los NPCs |  | 15h | 2018-10-11 09:00 A | 2018-10-12 18:00 A |  | 100% |  | 2018-10-11 09:00 | 2018-10-12 18:00 | 15h |  |  | must finish on 2018-10-24 19:00 | David Ramón Sevilla [20%]; Débora Galdeano González [12%]; Jose Vicente Anton Coy [20%]; Marines Ánton Castelló [20%] | 10.8h | 10.8h | 215.04 | 215.04 | 215.04 | 14 horas |
| 14 | 3.1.2 | [v1] Documento de diseño de toma de decision: espacio y metodos | inactive | 32h | 2018-10-19 09:00 | 2018-10-24 19:00 | 13 |  |  |  |  |  | 0d |  | must finish on 2018-10-24 19:00 | David Ramón Sevilla [15%]; Jose Vicente Anton Coy [20%]; Marines Ánton Castelló [20%]; Débora Galdeano González [5%] | 19.2h |  | 363 | -0 |  |  |
| 15 | 3.1.3 | [V1]Documento de diseño técnico del motor de IA |  | 37h | 2018-10-18 12:00 | 2018-10-24 19:00 | 14 |  |  | 2018-10-18 12:00 | 2018-10-24 19:00 | 37h | 0d |  | must finish on 2018-10-24 19:00 | David Ramón Sevilla [20%]; Débora Galdeano González [12%]; Jose Vicente Anton Coy [20%]; Marines Ánton Castelló [20%] | 26.64h |  | 510.72 | 510.72 |  |  |
| 16 | 3.1.4 | **[V2]Diseño e implementación b.objetos (1/10)** |  | 0.44d | 2018-10-11 09:00 A | 2018-10-11 12:30 A |  | 100% |  | 2018-10-11 09:00 | 2018-10-11 12:30 | 0.44d |  |  |  | Jose Ramon Barea Cecilia [50%]; María Sánchez Marqués [50%] | 3.5h | 3.5h | 90 | 90 | 90 | 6 horas |
| 17 | 3.1.4.1 | Investigacion |  | 3.5h | 2018-10-11 09:00 A | 2018-10-11 12:30 A |  | 100% |  | 2018-10-11 09:00 | 2018-10-11 12:30 | 3.5h |  |  |  |  |  |  |  |  |  |  |
| 18 | 3.1.4.2 | Diseño |  | 3.5h | 2018-10-11 09:00 A | 2018-10-11 12:30 A |  | 100% |  | 2018-10-11 09:00 | 2018-10-11 12:30 | 3.5h |  |  |  |  |  |  |  |  |  |  |
| 19 | 3.1.5 | **[TDS]Realizar sonidos para el juego (1/7)** |  | 0.36d | 2018-10-11 09:00 A | 2018-10-11 11:51 A |  | 100% |  | 2018-10-11 09:00 | 2018-10-11 11:51 | 0.36d |  |  |  |  | 10.25h | 10.25h | 289.08 | 289.08 | 289.08 | 14 horas |
| 20 | 3.1.5.1 | Síntesis |  | 2.85h | 2018-10-11 09:00 A | 2018-10-11 11:51 A |  | 100% |  | 2018-10-11 09:00 | 2018-10-11 11:51 | 2.85h |  |  |  | David Ramón Sevilla [15%]; Jose Ramon Barea Cecilia [15%]; Débora Galdeano González [15%]; María Sánchez Marqués [15%] | 1.71h | 1.71h | 46.2 | 46.2 | 46.2 |  |
| 21 | 3.1.5.2 | Grabaciones propias |  | 2.85h | 2018-10-11 09:00 A | 2018-10-11 11:51 A |  | 100% |  | 2018-10-11 09:00 | 2018-10-11 11:51 | 2.85h |  |  |  | David Ramón Sevilla [15%]; Jose Ramon Barea Cecilia [15%]; Débora Galdeano González [15%]; María Sánchez Marqués [15%] | 1.71h | 1.71h | 46.2 | 46.2 | 46.2 |  |
| 22 | 3.1.5.3 | Sonidos externos |  | 2.85h | 2018-10-11 09:00 A | 2018-10-11 11:51 A |  | 100% |  | 2018-10-11 09:00 | 2018-10-11 11:51 | 2.85h |  |  |  | David Ramón Sevilla [15%]; Jose Ramon Barea Cecilia [15%]; Débora Galdeano González [15%]; María Sánchez Marqués [15%] | 1.71h | 1.71h | 46.2 | 46.2 | 46.2 |  |
| 23 | 3.1.5.4 | Música |  | 2.85h | 2018-10-11 09:00 A | 2018-10-11 11:51 A |  | 100% |  | 2018-10-11 09:00 | 2018-10-11 11:51 | 2.85h |  |  |  | David Ramón Sevilla [15%]; Jose Ramon Barea Cecilia [15%]; Débora Galdeano González [15%]; María Sánchez Marqués [15%] | 1.71h | 1.71h | 46.2 | 46.2 | 46.2 |  |
| 24 | 3.1.5.5 | Cue Sheet |  | 1.42h | 2018-10-11 09:00 A | 2018-10-11 10:25 A |  | 100% |  | 2018-10-11 09:00 | 2018-10-11 10:25 | 1.42h |  |  |  | David Ramón Sevilla [15%]; Jose Ramon Barea Cecilia [15%]; Débora Galdeano González [15%]; María Sánchez Marqués [15%] | 0.85h | 0.85h | 29.04 | 29.04 | 29.04 |  |
| 25 | 3.1.5.6 | Hoja de metadatos |  | 1.42h | 2018-10-11 09:00 A | 2018-10-11 10:25 A |  | 100% |  | 2018-10-11 09:00 | 2018-10-11 10:25 | 1.42h |  |  |  | David Ramón Sevilla [15%]; Jose Ramon Barea Cecilia [15%]; Débora Galdeano González [15%]; María Sánchez Marqués [15%] | 0.85h | 0.85h | 29.04 | 29.04 | 29.04 |  |
| 26 | 3.1.5.7 | Integración del motor de audio en el juego con prueba de concepto |  | 2.85h | 2018-10-11 09:00 A | 2018-10-11 11:51 A |  | 100% |  | 2018-10-11 09:00 | 2018-10-11 11:51 | 2.85h |  |  |  | David Ramón Sevilla [15%]; Jose Ramon Barea Cecilia [15%]; Débora Galdeano González [15%]; María Sánchez Marqués [15%] | 1.71h | 1.71h | 46.2 | 46.2 | 46.2 |  |
| 27 | 3.1.6 | [RV]Boceto de los personajes (1/2) |  | 15h | 2018-10-11 09:00 A | 2018-10-12 18:00 A |  | 100% |  | 2018-10-11 09:00 | 2018-10-12 18:00 | 15h |  |  | must finish on 2018-10-24 19:00 | Débora Galdeano González [20%] | 3h | 3h | 70.4 | 70.4 | 70.4 | 5 horas |
| 28 | 3.1.7 | [PD]Vídeo con animación del logo de la empresa (1/2) |  | 30h | 2018-10-11 09:00 A | 2018-10-16 17:00 A |  | 100% |  | 2018-10-11 09:00 | 2018-10-16 17:00 | 30h |  |  | must finish on 2018-10-24 19:00 | Jose Ramon Barea Cecilia [30%]; Jose Vicente Anton Coy [20%]; Marines Ánton Castelló [20%]; David Ramón Sevilla [20%] | 27h | 27h | 520.8 | 520.8 | 520.8 | 24 horas |
| 29 | 3.1.8 | [PM]Registrar tiempos y % de realización de tareas en Project |  | 1h | 2018-10-24 18:00 A | 2018-10-24 19:00 A |  | 100% |  | 2018-10-24 18:00 | 2018-10-24 19:00 | 1h |  |  | must finish on 2018-10-24 19:00 | David Ramón Sevilla [2%]; Débora Galdeano González [2%]; Jose Ramon Barea Cecilia [2%]; Jose Vicente Anton Coy [2%]; María Sánchez Marqués [2%]; Marines Ánton Castelló [2%] | 0.12h | 0.12h | 4.64 | 4.64 | 4.64 | 48 minutos |

Notes:
- 13: Falta bocetos o esquemas
- 14: Se mueven a iteraccion 4 por falta de tiempo
- 15: Se mueven a iteraccion 4 por falta de tiempo
- 27: Faltarian los enemigos
- 29: Se han realizado en excel por comodidad, las proximas en toggl

| ID | WBS | Task | Type | Duration | Start | Finish | Predecessors | Complete | Remaining | Baseline start | Baseline finish | Baseline duration | Total slack | Constraint | Deadline | Resources | Work | Actual work | Cost | Baseline cost | Actual cost | Horas Estimadas | Encargados | Horas realizadas |
| --- | --- | --- | --- | --- | --- | --- | --- | --- | --- | --- | --- | --- | --- | --- | --- | --- | --- | --- | --- | --- | --- | --- | --- | --- |
| 30 | 3.2 | **Iteracion 4** |  | 9.1d | 2018-10-25 09:00 A | 2018-11-07 09:48 |  | 99% | 0.06d | 2018-10-25 09:00 | 2018-11-07 09:48 | 9.1d | 0.9d | start no earlier than 2018-10-25 09:00 |  |  | 59.92h | 59.02h | 1,344.23 | 1,344.23 | 1,309.43 |  |  |  |
| 31 | 3.2.1 | [v1] Documento de diseño de toma de decision: espacio y metodos (1/2) |  | 4h | 2018-10-25 09:00 A | 2018-10-25 13:00 A | 13 | 100% |  | 2018-10-25 09:00 | 2018-10-25 13:00 | 4h |  |  | 2018-11-07 19:00 | David Ramón Sevilla [10%]; Jose Vicente Anton Coy [10%]; Marines Ánton Castelló [10%]; Débora Galdeano González [10%] | 1.6h | 1.6h | 38 | 38 | 38 | 32 h | Marines, Debora, David | 4 h |
| 32 | 3.2.2 | [V1]Documento de diseño técnico del motor de IA (1/2) |  | 8h | 2018-10-31 09:00 A | 2018-10-31 19:00 A | 31 | 100% |  | 2018-10-31 09:00 | 2018-10-31 19:00 | 8h |  |  | 2018-11-07 19:00 | David Ramón Sevilla [10%]; Débora Galdeano González [10%]; Jose Vicente Anton Coy [10%]; Marines Ánton Castelló [10%] | 3.2h | 3.2h | 68.4 | 68.4 | 68.4 | 37 h | Marines, Debora, David | 8 h |
| 33 | 3.2.3 | **[V1]Sistema de toma de decisión con Behaviour Trees (1/2)** |  | 1.88d | 2018-10-29 09:00 A | 2018-10-30 18:00 A |  | 100% |  | 2018-10-29 09:00 | 2018-10-30 18:00 | 1.88d |  |  | 2018-11-07 19:00 | David Ramón Sevilla [10%]; Débora Galdeano González [10%]; Jose Vicente Anton Coy [10%]; Marines Ánton Castelló [10%] | 6h | 6h | 121.6 | 121.6 | 121.6 | 51 h | Debora | 15 h |
| 34 | 3.2.3.1 | Investigacion |  | 10h | 2018-10-29 09:00 A | 2018-10-30 11:00 A |  | 100% |  | 2018-10-29 09:00 | 2018-10-30 11:00 | 10h |  | start no earlier than 2018-10-27 09:00 | 2018-11-07 19:00 |  |  |  |  |  |  | 10 h |  | 10 h |
| 35 | 3.2.3.2 | Diseño |  | 5h | 2018-10-30 11:00 A | 2018-10-30 18:00 A | 34 | 100% |  | 2018-10-30 11:00 | 2018-10-30 18:00 | 5h |  |  | 2018-11-07 19:00 |  |  |  |  |  |  | 5 h |  | 5 h |
| 36 | 3.2.3.3 | Implementar | milestone | 0h | 2018-10-30 18:00 A | 2018-10-30 18:00 A | 35 | 100% |  | 2018-10-30 18:00 | 2018-10-30 18:00 | 0h |  |  | 2018-11-07 19:00 |  |  |  |  |  |  | 36 h |  | 0 h |
| 37 | 3.2.4 | [V1]Documento de diseño de mecánicas de los NPCs 2/2 |  | 22h | 2018-10-25 09:00 A | 2018-10-29 17:00 A |  | 100% |  | 2018-10-25 09:00 | 2018-10-29 17:00 | 22h |  | finish no later than 2018-11-07 19:00 | 2018-11-07 19:00 | Débora Galdeano González [10%]; Marines Ánton Castelló [10%]; David Ramón Sevilla [10%]; Jose Vicente Anton Coy [10%] | 8.8h | 8.8h | 174.8 | 174.8 | 174.8 | 22 h | Marines debora david jose vicente | 5 h |
| 38 | 3.2.5 | **[V2]Diseño e implementación b.objetos (2/10)** |  | 0.88d | 2018-10-30 09:00 A | 2018-10-30 18:00 A |  | 100% |  | 2018-10-30 09:00 | 2018-10-30 18:00 | 0.88d |  | finish no later than 2018-11-07 19:00 | 2018-11-07 19:00 | María Sánchez Marqués [10%]; Jose Ramon Barea Cecilia [10%]; David Ramón Sevilla [10%]; Débora Galdeano González [10%]; Jose Vicente Anton Coy [10%]; Marines Ánton Castelló [10%] | 4.2h | 4.2h | 92.8 | 92.8 | 92.8 | 7 h | Jose vicente | 14 h |
| 39 | 3.2.5.1 | Diseño |  | 2h | 2018-10-30 09:00 A | 2018-10-30 11:00 A |  | 100% |  | 2018-10-30 09:00 | 2018-10-30 11:00 | 2h |  | start no earlier than 2018-10-30 09:00 |  |  |  |  |  |  |  |  |  |  |
| 40 | 3.2.5.2 | Implementacion |  | 5h | 2018-10-30 11:00 A | 2018-10-30 18:00 A | 39 | 100% |  | 2018-10-30 11:00 | 2018-10-30 18:00 | 5h |  |  |  |  |  |  |  |  |  |  |  |  |
| 41 | 3.2.6 | **[v2]Diseño e implementacion b.componentes 1** |  | 1.25d | 2018-10-31 09:00 A | 2018-11-01 11:00 A |  | 100% |  | 2018-10-31 09:00 | 2018-11-01 11:00 | 1.25d |  | finish no later than 2018-11-07 19:00 | 2018-11-07 19:00 | David Ramón Sevilla [10%]; Jose Ramon Barea Cecilia [10%]; Jose Vicente Anton Coy [10%]; María Sánchez Marqués [10%]; Marines Ánton Castelló [10%]; Débora Galdeano González [10%] | 6h | 6h | 127.6 | 127.6 | 127.6 | 10 h | Jose ramon, Maria | 6 h |
| 42 | 3.2.6.1 | Investigar |  | 5h | 2018-10-31 09:00 A | 2018-10-31 16:00 A |  | 100% |  | 2018-10-31 09:00 | 2018-10-31 16:00 | 5h |  | start no earlier than 2018-10-31 09:00 |  |  |  |  |  |  |  |  |  |  |
| 43 | 3.2.6.2 | Diseñar |  | 5h | 2018-10-31 16:00 A | 2018-11-01 11:00 A | 42 | 100% |  | 2018-10-31 16:00 | 2018-11-01 11:00 | 5h |  |  |  |  |  |  |  |  |  |  |  |  |
| 44 | 3.2.7 | [v2]Utilización de joints en las mecánicas jugables (1/2) |  | 4h | 2018-10-25 09:00 A | 2018-10-25 13:00 A |  | 100% |  | 2018-10-25 09:00 | 2018-10-25 13:00 | 4h |  |  | 2018-11-07 19:00 | David Ramón Sevilla [10%]; Débora Galdeano González [10%]; Jose Ramon Barea Cecilia [10%]; Jose Vicente Anton Coy [10%]; María Sánchez Marqués [10%]; Marines Ánton Castelló [10%] | 2.4h | 2.4h | 58 | 58 | 58 | 17 h | Jose Ramon | 4 h |
| 45 | 3.2.8 | [V2]Mecánicas básicas entidades sin IA |  | 1h | 2018-10-25 15:00 | 2018-10-25 16:00 | 44 |  |  | 2018-10-25 15:00 | 2018-10-25 16:00 | 1h | 9.38d | finish no later than 2018-11-07 19:00 | 2018-11-07 19:00 | David Ramón Sevilla [15%]; Débora Galdeano González [15%]; Jose Ramon Barea Cecilia [15%]; Jose Vicente Anton Coy [15%]; María Sánchez Marqués [15%]; Marines Ánton Castelló [15%] | 0.9h |  | 34.8 | 34.8 |  | 30 h | Maria, jose vicente | 0 h |
| 46 | 3.2.9 | [RV]Boceto de los personajes 2/3 |  | 15h | 2018-11-02 09:00 A | 2018-11-05 18:00 A |  | 100% |  | 2018-11-02 09:00 | 2018-11-05 18:00 | 15h |  | start no earlier than 2018-11-02 09:00 | 2018-11-07 19:00 | María Sánchez Marqués [5%]; Débora Galdeano González [10%]; Marines Ánton Castelló [5%] | 3h | 3h | 65.6 | 65.6 | 65.6 | 15 h | Debora, Marines | 14 h |
| 47 | 3.2.10 | [PD]Vídeo con animación del logo de la empresa (2/2) |  | 30h | 2018-10-25 09:00 A | 2018-10-30 17:00 A |  | 100% |  | 2018-10-25 09:00 | 2018-10-30 17:00 | 30h |  |  |  | David Ramón Sevilla [10%]; Jose Vicente Anton Coy [10%]; Marines Ánton Castelló [10%] | 9h | 9h | 167.4 | 167.4 | 167.4 | 30 h | David | 1 h |
| 48 | 3.2.11 | **[TDS]Realizar sonidos para el juego 2/7** |  | 0.36d | 2018-10-25 09:00 A | 2018-10-25 11:51 A |  | 100% |  | 2018-10-25 09:00 | 2018-10-25 11:51 | 0.36d |  | finish no later than 2018-11-07 19:00 | 2018-11-07 19:00 | David Ramón Sevilla [15%]; Débora Galdeano González [15%]; María Sánchez Marqués [15%]; Jose Ramon Barea Cecilia [15%] | 11.96h | 11.96h | 335.28 | 335.28 | 335.28 | 15 h | David, Jose ramon, debora, maria | 9 h |
| 49 | 3.2.11.1 | Síntesis |  | 2.85h | 2018-10-25 09:00 A | 2018-10-25 11:51 A |  | 100% |  | 2018-10-25 09:00 | 2018-10-25 11:51 | 2.85h |  |  |  | David Ramón Sevilla [15%]; Jose Ramon Barea Cecilia [15%]; Débora Galdeano González [15%]; María Sánchez Marqués [15%] | 1.71h | 1.71h | 46.2 | 46.2 | 46.2 |  |  |  |
| 50 | 3.2.11.2 | Grabaciones propias |  | 2.85h | 2018-10-25 09:00 A | 2018-10-25 11:51 A |  | 100% |  | 2018-10-25 09:00 | 2018-10-25 11:51 | 2.85h |  |  |  | David Ramón Sevilla [15%]; Jose Ramon Barea Cecilia [15%]; Débora Galdeano González [15%]; María Sánchez Marqués [15%] | 1.71h | 1.71h | 46.2 | 46.2 | 46.2 |  |  |  |
| 51 | 3.2.11.3 | Sonidos externos |  | 2.85h | 2018-10-25 09:00 A | 2018-10-25 11:51 A |  | 100% |  | 2018-10-25 09:00 | 2018-10-25 11:51 | 2.85h |  |  |  | David Ramón Sevilla [15%]; Jose Ramon Barea Cecilia [15%]; Débora Galdeano González [15%]; María Sánchez Marqués [15%] | 1.71h | 1.71h | 46.2 | 46.2 | 46.2 |  |  |  |
| 52 | 3.2.11.4 | Música |  | 2.85h | 2018-10-25 09:00 A | 2018-10-25 11:51 A |  | 100% |  | 2018-10-25 09:00 | 2018-10-25 11:51 | 2.85h |  |  |  | David Ramón Sevilla [15%]; Jose Ramon Barea Cecilia [15%]; Débora Galdeano González [15%]; María Sánchez Marqués [15%] | 1.71h | 1.71h | 46.2 | 46.2 | 46.2 |  |  |  |
| 53 | 3.2.11.5 | Cue Sheet |  | 1.42h | 2018-10-25 09:00 A | 2018-10-25 10:25 A |  | 100% |  | 2018-10-25 09:00 | 2018-10-25 10:25 | 1.42h |  |  |  | David Ramón Sevilla [15%]; Jose Ramon Barea Cecilia [15%]; Débora Galdeano González [15%]; María Sánchez Marqués [15%] | 0.85h | 0.85h | 29.04 | 29.04 | 29.04 |  |  |  |
| 54 | 3.2.11.6 | Hoja de metadatos |  | 1.42h | 2018-10-25 09:00 A | 2018-10-25 10:25 A |  | 100% |  | 2018-10-25 09:00 | 2018-10-25 10:25 | 1.42h |  |  |  | David Ramón Sevilla [15%]; Jose Ramon Barea Cecilia [15%]; Débora Galdeano González [15%]; María Sánchez Marqués [15%] | 0.85h | 0.85h | 29.04 | 29.04 | 29.04 |  |  |  |
| 55 | 3.2.11.7 | Integración del motor de audio en el juego con prueba de concepto |  | 2.85h | 2018-10-25 09:00 A | 2018-10-25 11:51 A |  | 100% |  | 2018-10-25 09:00 | 2018-10-25 11:51 | 2.85h |  |  |  | David Ramón Sevilla [15%]; Jose Ramon Barea Cecilia [15%]; Débora Galdeano González [15%]; María Sánchez Marqués [15%] | 1.71h | 1.71h | 46.2 | 46.2 | 46.2 |  |  |  |
| 56 | 3.2.12 | [PM]Registrar tiempos y % de realización de tareas en Project |  | 48min | 2018-11-07 09:00 A | 2018-11-07 09:48 A |  | 100% |  | 2018-11-07 09:00 | 2018-11-07 09:48 | 48min |  | start no earlier than 2018-11-07 09:00 | 2018-11-07 19:00 | David Ramón Sevilla [2%]; Débora Galdeano González [2%]; Jose Ramon Barea Cecilia [2%]; Jose Vicente Anton Coy [2%]; María Sánchez Marqués [2%]; Marines Ánton Castelló [2%] | 0.1h | 0.1h | 4.18 | 4.18 | 4.18 | 48 m | Todos | 48 m |
| 57 | 3.2.13 | [PM]Rellenar documento Gestión de riesgos |  | 23.04h | 2018-11-02 09:00 A | 2018-11-06 18:02 A |  | 100% |  | 2018-11-02 09:00 | 2018-11-06 18:02 | 23.04h |  | start no earlier than 2018-11-02 09:00 | 2018-11-07 19:00 | David Ramón Sevilla [2%]; Débora Galdeano González [2%]; Jose Ramon Barea Cecilia [2%]; María Sánchez Marqués [2%]; Marines Ánton Castelló [2%]; Jose Vicente Anton Coy [2%] | 2.76h | 2.76h | 55.77 | 55.77 | 55.77 | 23 h | Maria, Debora, David | 9 h |

Notes:
- 31: Se mueven a iteraccion 4 por falta de tiempo. / Se mueve a la iteracion 5 por falta de tiempo.
- 32: Se mueven a iteraccion 4 por falta de tiempo. / Se mueve a la iteracion 5 por falta de tiempo.
- 33: Se pasa a la iteracion 5 por falta de tiempo.
- 37: bocetos
- 38: De diseño tenemos menos, empezamos a implementar
- 44: Se pasa a la iteracion 5 por falta de tiempo.
- 45: Se mueve a la iteracion 5 por problemas tecnicos de la persona a cargo.
- 46: Realizar enemigos. / Se pasa pequeña tarea de 4 horas a la iteracion 5.

| ID | WBS | Task | Duration | Start | Finish | Predecessors | Complete | Baseline start | Baseline finish | Baseline duration | Constraint | Resources | Work | Actual work | Cost | Baseline cost | Actual cost | Horas Estimadas | Encargados | Horas realizadas |
| --- | --- | --- | --- | --- | --- | --- | --- | --- | --- | --- | --- | --- | --- | --- | --- | --- | --- | --- | --- | --- |
| 58 | 3.3 | **Iteracion 5** | 10d | 2018-11-08 09:00 A | 2018-11-21 19:00 A |  | 100% | 2018-11-08 09:00 | 2018-11-21 19:00 | 10d | start no earlier than 2018-11-08 09:00 |  | 212.56h | 212.56h | 4,422.15 | 4,422.15 | 4,422.15 |  |  |  |
| 59 | 3.3.1 | [RV]Boceto de los personajes 3/3 | 4h | 2018-11-08 09:00 A | 2018-11-08 13:00 A |  | 100% | 2018-11-08 09:00 | 2018-11-08 13:00 | 4h |  | Débora Galdeano González [50%]; Marines Ánton Castelló [50%] | 4h | 4h | 100 | 100 | 100 | 4 h | Marines,Debora | 4,65 |
| 60 | 3.3.2 | [v1] Documento de diseño de toma de decision: espacio y metodos (2/2) | 28h | 2018-11-08 09:00 A | 2018-11-13 13:00 A |  | 100% | 2018-11-08 09:00 | 2018-11-13 13:00 | 28h |  | David Ramón Sevilla [50%]; Jose Vicente Anton Coy [50%] | 28h | 28h | 522 | 522 | 522 | 28 h | Jose vicente, David ramon | 10,7 |
| 61 | 3.3.3 | [V1]Documento de diseño técnico del motor de IA (2/2) | 29h | 2018-11-09 09:00 A | 2018-11-14 16:00 A |  | 100% | 2018-11-09 09:00 | 2018-11-14 16:00 | 29h | start no earlier than 2018-11-09 09:00 | Marines Ánton Castelló [80%] | 23.2h | 23.2h | 432 | 432 | 432 | 29 h | Marines | 12,85 |
| 62 | 3.3.4 | [V1]Sistema de toma de decisión con Behaviour Trees (3/2) (investigacion y diseño) | 36h | 2018-11-09 09:00 A | 2018-11-15 13:00 A |  | 100% | 2018-11-09 09:00 | 2018-11-15 13:00 | 36h | start no earlier than 2018-11-09 09:00 | Débora Galdeano González [80%] | 28.8h | 28.8h | 651.2 | 651.2 | 651.2 | 36 h | Debora | 53,2 |
| 63 | 3.3.5 | [v2]Utilización de joints en las mecánicas jugables (2/2) | 13h | 2018-11-09 09:00 A | 2018-11-12 16:00 A |  | 100% | 2018-11-09 09:00 | 2018-11-12 16:00 | 13h | start no earlier than 2018-11-09 09:00 | Jose Ramon Barea Cecilia [80%] | 10.4h | 10.4h | 224 | 224 | 224 | 17 h | Jose ramon | 26,86 |
| 64 | 3.3.6 | [V2]Mecánicas básicas entidades sin IA | 48h | 2018-11-08 09:00 A | 2018-11-15 19:00 A |  | 100% | 2018-11-08 09:00 | 2018-11-15 19:00 | 48h |  | María Sánchez Marqués [50%] | 24h | 24h | 490 | 490 | 490 | 30 h | Maria | 14,5 |
| 65 | 3.3.7 | [PM]Detallar plan iteraciones del mes de Noviembre. Creación Subtareas y precedencias en Project | 23.4h | 2018-11-08 09:00 A | 2018-11-12 18:24 A |  | 100% | 2018-11-08 09:00 | 2018-11-12 18:24 | 23.4h |  | Jose Vicente Anton Coy [2%]; David Ramón Sevilla [2%] | 0.94h | 0.94h | 17.57 | 17.57 | 17.57 | 23 h | Jose Vicente, David ramon | 0.5 |
| 66 | 3.3.8 | [PM]Detallar plan iteraciones del mes de Noviembre. Asignar recursos a las tareas en Project | 23h | 2018-11-12 18:24 A | 2018-11-15 17:24 A | 65 | 100% | 2018-11-12 18:24 | 2018-11-15 17:24 | 23h |  | David Ramón Sevilla [3%]; Jose Vicente Anton Coy [3%] | 1.38h | 1.38h | 25.92 | 25.92 | 25.92 | 23 h | Jose Vicente, David ramon |  |
| 67 | 3.3.9 | [PM]Aplicar el modelo EVA en Project | 21.6h | 2018-11-16 09:00 A | 2018-11-20 16:36 A |  | 100% | 2018-11-16 09:00 | 2018-11-20 16:36 | 21.6h | start no earlier than 2018-11-16 09:00 | David Ramón Sevilla [3%]; Jose Vicente Anton Coy [3%] | 1.3h | 1.3h | 24.41 | 24.41 | 24.41 | 21 h | Jose Vicente, David ramon |  |
| 68 | 3.3.10 | [RV]Bocetos de los elementos | 18h | 2018-11-16 09:00 A | 2018-11-20 11:00 A |  | 100% | 2018-11-16 09:00 | 2018-11-20 11:00 | 18h | start no earlier than 2018-11-16 09:00 | Débora Galdeano González [50%]; Marines Ánton Castelló [50%] | 18h | 18h | 380 | 380 | 380 | 18 h | Debora, marines | 0.9 |
| 69 | 3.3.11 | **[V2]Diseño e implementación b.objetos (3/10)** | 0.88d | 2018-11-15 09:00 A | 2018-11-15 18:00 A |  | 100% | 2018-11-15 09:00 | 2018-11-15 18:00 | 0.88d |  | Jose Vicente Anton Coy [10%]; David Ramón Sevilla [10%] | 1.4h | 1.4h | 28.8 | 28.8 | 28.8 | 7 h | Jose Vicente |  |
| 70 | 3.3.11.1 | Implementacion | 7h | 2018-11-15 09:00 A | 2018-11-15 18:00 A |  | 100% | 2018-11-15 09:00 | 2018-11-15 18:00 | 7h | start no earlier than 2018-11-15 09:00 |  |  |  |  |  |  | 7 h |  |  |
| 71 | 3.3.12 | [v2]Diseño e implementacion b.componentes 2 | 10h | 2018-11-15 09:00 A | 2018-11-16 11:00 A |  | 100% | 2018-11-15 09:00 | 2018-11-16 11:00 | 10h | start no earlier than 2018-11-15 09:00 | Jose Ramon Barea Cecilia [50%]; María Sánchez Marqués [50%] | 10h | 10h | 220 | 220 | 220 | 10 h | Maria | 10 |
| 72 | 3.3.13 | [v2]Formato propio para la definicion de los niveles(documentos con la especifiacion del formato) | 11h | 2018-11-13 09:00 A | 2018-11-14 12:00 A |  | 100% | 2018-11-13 09:00 | 2018-11-14 12:00 | 11h | start no earlier than 2018-11-13 09:00 | Jose Vicente Anton Coy [50%]; Jose Ramon Barea Cecilia [80%] | 14.3h | 14.3h | 300 | 300 | 300 | 11 h | Jose Vicente, Jose ramon | 5,2 |
| 73 | 3.3.14 | [V2]Creación de un cargador de niveles | 28h | 2018-11-14 12:00 A | 2018-11-19 18:00 A | 72 | 100% | 2018-11-14 12:00 | 2018-11-19 18:00 | 28h |  | Jose Ramon Barea Cecilia [50%]; Jose Vicente Anton Coy [50%] | 28h | 28h | 551 | 551 | 551 | 28 h | Jose Vicente, Jose Ramon | 12,6 |
| 74 | 3.3.15 | [v2]Implementacion de camara de seguimiento | 17h | 2018-11-16 09:00 A | 2018-11-20 10:00 A |  | 100% | 2018-11-16 09:00 | 2018-11-20 10:00 | 17h | start no earlier than 2018-11-16 09:00 | Marines Ánton Castelló [50%] | 8.5h | 8.5h | 162 | 162 | 162 | 17 h | Marines | 4,25 |
| 75 | 3.3.16 | **[TDS]Realizar sonidos para el juego 3/7** | 0.36d | 2018-11-08 09:00 A | 2018-11-08 11:51 A |  | 100% | 2018-11-08 09:00 | 2018-11-08 11:51 | 0.36d |  |  | 10.25h | 10.25h | 289.08 | 289.08 | 289.08 | 15 h | Debora, David, Jose ramon, Maria | 26.75 |
| 76 | 3.3.16.1 | Síntesis | 2.85h | 2018-11-08 09:00 A | 2018-11-08 11:51 A |  | 100% | 2018-11-08 09:00 | 2018-11-08 11:51 | 2.85h |  | David Ramón Sevilla [15%]; Jose Ramon Barea Cecilia [15%]; Débora Galdeano González [15%]; María Sánchez Marqués [15%] | 1.71h | 1.71h | 46.2 | 46.2 | 46.2 |  |  |  |
| 77 | 3.3.16.2 | Grabaciones propias | 2.85h | 2018-11-08 09:00 A | 2018-11-08 11:51 A |  | 100% | 2018-11-08 09:00 | 2018-11-08 11:51 | 2.85h |  | David Ramón Sevilla [15%]; Jose Ramon Barea Cecilia [15%]; Débora Galdeano González [15%]; María Sánchez Marqués [15%] | 1.71h | 1.71h | 46.2 | 46.2 | 46.2 |  |  |  |
| 78 | 3.3.16.3 | Sonidos externos | 2.85h | 2018-11-08 09:00 A | 2018-11-08 11:51 A |  | 100% | 2018-11-08 09:00 | 2018-11-08 11:51 | 2.85h |  | David Ramón Sevilla [15%]; Jose Ramon Barea Cecilia [15%]; Débora Galdeano González [15%]; María Sánchez Marqués [15%] | 1.71h | 1.71h | 46.2 | 46.2 | 46.2 |  |  |  |
| 79 | 3.3.16.4 | Música | 2.85h | 2018-11-08 09:00 A | 2018-11-08 11:51 A |  | 100% | 2018-11-08 09:00 | 2018-11-08 11:51 | 2.85h |  | David Ramón Sevilla [15%]; Jose Ramon Barea Cecilia [15%]; Débora Galdeano González [15%]; María Sánchez Marqués [15%] | 1.71h | 1.71h | 46.2 | 46.2 | 46.2 |  |  |  |
| 80 | 3.3.16.5 | Cue Sheet | 1.42h | 2018-11-08 09:00 A | 2018-11-08 10:25 A |  | 100% | 2018-11-08 09:00 | 2018-11-08 10:25 | 1.42h |  | David Ramón Sevilla [15%]; Jose Ramon Barea Cecilia [15%]; Débora Galdeano González [15%]; María Sánchez Marqués [15%] | 0.85h | 0.85h | 29.04 | 29.04 | 29.04 |  |  |  |
| 81 | 3.3.16.6 | Hoja de metadatos | 1.42h | 2018-11-08 09:00 A | 2018-11-08 10:25 A |  | 100% | 2018-11-08 09:00 | 2018-11-08 10:25 | 1.42h |  | David Ramón Sevilla [15%]; Jose Ramon Barea Cecilia [15%]; Débora Galdeano González [15%]; María Sánchez Marqués [15%] | 0.85h | 0.85h | 29.04 | 29.04 | 29.04 |  |  |  |
| 82 | 3.3.16.7 | Integración del motor de audio en el juego con prueba de concepto | 2.85h | 2018-11-08 09:00 A | 2018-11-08 11:51 A |  | 100% | 2018-11-08 09:00 | 2018-11-08 11:51 | 2.85h |  | David Ramón Sevilla [15%]; Jose Ramon Barea Cecilia [15%]; Débora Galdeano González [15%]; María Sánchez Marqués [15%] | 1.71h | 1.71h | 46.2 | 46.2 | 46.2 |  |  |  |
| 83 | 3.3.17 | [PM]Registrar tiempos y % de realización de tareas en Project | 48min | 2018-11-21 18:12 A | 2018-11-21 19:00 A |  | 100% | 2018-11-21 18:12 | 2018-11-21 19:00 | 48min | finish no earlier than 2018-11-21 19:00 | David Ramón Sevilla [2%]; Débora Galdeano González [2%]; Jose Ramon Barea Cecilia [2%]; Jose Vicente Anton Coy [2%]; María Sánchez Marqués [2%]; Marines Ánton Castelló [2%] | 0.1h | 0.1h | 4.18 | 4.18 | 4.18 | 48 minutos | Todos | 48 minutos |

Notes:
- 62: Se crea una tarea en la iteracion 6 para implementarlo
- 68: Se mueve a la iteraccion 5 por que faltan bocetos de personajes
- 83: Se han realizado en excel por comodidad, las proximas en toggl

| ID | WBS | Task | Duration | Start | Finish | Predecessors | Complete | Remaining | Baseline start | Baseline finish | Baseline duration | Total slack | Free slack | Constraint | Resources | Work | Actual work | Cost | Baseline cost | Actual cost | Horas Estimadas | Encargados | Horas realizadas |
| --- | --- | --- | --- | --- | --- | --- | --- | --- | --- | --- | --- | --- | --- | --- | --- | --- | --- | --- | --- | --- | --- | --- | --- |
| 84 | 3.4 | **Iteracion 6** | 10d | 2018-11-22 09:00 A | 2018-12-05 19:00 |  | 71% | 2.89d | 2018-11-22 09:00 | 2018-12-05 19:00 | 10d | 108d |  | start no earlier than 2018-11-22 09:00 |  | 184.34h | 151.59h | 3,771.06 | 3,771.06 | 3,128.81 |  |  |  |
| 85 | 3.4.1 | **[v1]Movimiento IA (PATHFINDING)** | 3.75d | 2018-11-22 09:00 A | 2018-11-27 17:00 A |  | 100% |  | 2018-11-22 09:00 | 2018-11-27 17:00 | 3.75d |  |  |  | Débora Galdeano González [50%]; Marines Ánton Castelló [50%] | 30h | 30h | 620 | 620 | 620 | 30 h | Marines, Debora | 31.5 |
| 86 | 3.4.1.1 | Investigacion | 10h | 2018-11-22 09:00 A | 2018-11-23 11:00 A |  | 100% |  | 2018-11-22 09:00 | 2018-11-23 11:00 | 10h |  |  |  |  |  |  |  |  |  | 10 h |  |  |
| 87 | 3.4.1.2 | Implementacion | 20h | 2018-11-23 11:00 A | 2018-11-27 17:00 A | 86 | 100% |  | 2018-11-23 11:00 | 2018-11-27 17:00 | 20h |  |  |  |  |  |  |  |  |  | 10 h |  |  |
| 88 | 3.4.2 | **[V1]Sistema de percepción sensorial (vista, oído, olfato, canales…)** | 5.75d | 2018-11-22 09:00 A | 2018-11-29 17:00 A |  | 100% |  | 2018-11-22 09:00 | 2018-11-29 17:00 | 5.75d |  |  |  | Jose Vicente Anton Coy [50%]; David Ramón Sevilla [50%] | 46h | 46h | 846 | 846 | 846 | 46 h | Jose vicente, David ramon | 30 |
| 89 | 3.4.2.1 | Investigacion | 16h | 2018-11-22 09:00 A | 2018-11-23 19:00 A |  | 100% |  | 2018-11-22 09:00 | 2018-11-23 19:00 | 16h |  |  | start no earlier than 2018-11-22 09:00 |  |  |  |  |  |  |  |  |  |
| 90 | 3.4.2.2 | Diseño | 6h | 2018-11-26 09:00 A | 2018-11-26 17:00 A | 89 | 100% |  | 2018-11-26 09:00 | 2018-11-26 17:00 | 6h |  |  |  |  |  |  |  |  |  |  |  |  |
| 91 | 3.4.2.3 | Implementar | 24h | 2018-11-26 17:00 A | 2018-11-29 17:00 A | 90 | 100% |  | 2018-11-26 17:00 | 2018-11-29 17:00 | 24h |  |  |  |  |  |  |  |  |  |  |  |  |
| 92 | 3.4.3 | [V1]Sistema de toma de decisión con Behaviour Trees (3/3) (Implementacion) | 20h | 2018-11-29 17:00 A | 2018-12-04 11:00 A | 85, 88 | 100% |  | 2018-11-29 17:00 | 2018-12-04 11:00 | 20h |  |  |  | Marines Ánton Castelló [50%]; Débora Galdeano González [50%] | 20h | 20h | 420 | 420 | 420 | 20 h | Marines, debora | 26.6 |
| 93 | 3.4.4 | [v2]Control del player: movimiento y colisiones sin motor de físicas | 40h | 2018-11-22 09:00 A | 2018-11-28 19:00 |  | 50% | 20h | 2018-11-22 09:00 | 2018-11-28 19:00 | 40h | 113d |  |  | María Sánchez Marqués [50%]; Jose Ramon Barea Cecilia [50%] | 40h | 20h | 820 | 820 | 420 | 40 h | Jose ramon, Maria | 47.55 |
| 94 | 3.4.5 | [V2]Utilización de propiedades físicas en las mecánicas jugables | 17h | 2018-11-29 09:00 A | 2018-12-03 10:00 |  | 25% | 12.75h | 2018-11-29 09:00 | 2018-12-03 10:00 | 17h | 110.88d |  | start no earlier than 2018-11-29 07:00 | Jose Ramon Barea Cecilia [50%]; Jose Vicente Anton Coy [50%] | 17h | 4.25h | 342 | 342 | 99.75 | 17 h | Jose ramon, Jose vicente |  |
| 95 | 3.4.6 | [RV]Bocetos del entorno | 18h | 2018-11-29 09:00 A | 2018-12-03 11:00 A |  | 100% |  | 2018-11-29 09:00 | 2018-12-03 11:00 | 18h |  |  | start no earlier than 2018-11-29 09:00 | Débora Galdeano González [50%]; María Sánchez Marqués [50%] | 18h | 18h | 399 | 399 | 399 | 18 h | Debora, Maria | 6.5 |
| 96 | 3.4.7 | **[TDS]Realizar sonidos para el juego 4/7** | 0.36d | 2018-11-22 09:00 A | 2018-11-22 11:51 A |  | 100% |  | 2018-11-22 09:00 | 2018-11-22 11:51 | 0.36d |  |  |  | David Ramón Sevilla [10%]; María Sánchez Marqués [10%]; Débora Galdeano González [10%]; Jose Ramon Barea Cecilia [10%] | 11.39h | 11.39h | 319.88 | 319.88 | 319.88 | 15 h | Maria, Debora, David, Jose ramon | 43.2 |
| 97 | 3.4.7.1 | Síntesis | 2.85h | 2018-11-22 09:00 A | 2018-11-22 11:51 A |  | 100% |  | 2018-11-22 09:00 | 2018-11-22 11:51 | 2.85h |  |  |  | David Ramón Sevilla [15%]; Jose Ramon Barea Cecilia [15%]; Débora Galdeano González [15%]; María Sánchez Marqués [15%] | 1.71h | 1.71h | 46.2 | 46.2 | 46.2 |  |  |  |
| 98 | 3.4.7.2 | Grabaciones propias | 2.85h | 2018-11-22 09:00 A | 2018-11-22 11:51 A |  | 100% |  | 2018-11-22 09:00 | 2018-11-22 11:51 | 2.85h |  |  |  | David Ramón Sevilla [15%]; Jose Ramon Barea Cecilia [15%]; Débora Galdeano González [15%]; María Sánchez Marqués [15%] | 1.71h | 1.71h | 46.2 | 46.2 | 46.2 |  |  |  |
| 99 | 3.4.7.3 | Sonidos externos | 2.85h | 2018-11-22 09:00 A | 2018-11-22 11:51 A |  | 100% |  | 2018-11-22 09:00 | 2018-11-22 11:51 | 2.85h |  |  |  | David Ramón Sevilla [15%]; Jose Ramon Barea Cecilia [15%]; Débora Galdeano González [15%]; María Sánchez Marqués [15%] | 1.71h | 1.71h | 46.2 | 46.2 | 46.2 |  |  |  |
| 100 | 3.4.7.4 | Música | 2.85h | 2018-11-22 09:00 A | 2018-11-22 11:51 A |  | 100% |  | 2018-11-22 09:00 | 2018-11-22 11:51 | 2.85h |  |  |  | David Ramón Sevilla [15%]; Jose Ramon Barea Cecilia [15%]; Débora Galdeano González [15%]; María Sánchez Marqués [15%] | 1.71h | 1.71h | 46.2 | 46.2 | 46.2 |  |  |  |
| 101 | 3.4.7.5 | Cue Sheet | 1.42h | 2018-11-22 09:00 A | 2018-11-22 10:25 A |  | 100% |  | 2018-11-22 09:00 | 2018-11-22 10:25 | 1.42h |  |  |  | David Ramón Sevilla [15%]; Jose Ramon Barea Cecilia [15%]; Débora Galdeano González [15%]; María Sánchez Marqués [15%] | 0.85h | 0.85h | 29.04 | 29.04 | 29.04 |  |  |  |
| 102 | 3.4.7.6 | Hoja de metadatos | 1.42h | 2018-11-22 09:00 A | 2018-11-22 10:25 A |  | 100% |  | 2018-11-22 09:00 | 2018-11-22 10:25 | 1.42h |  |  |  | David Ramón Sevilla [15%]; Jose Ramon Barea Cecilia [15%]; Débora Galdeano González [15%]; María Sánchez Marqués [15%] | 0.85h | 0.85h | 29.04 | 29.04 | 29.04 |  |  |  |
| 103 | 3.4.7.7 | Integración del motor de audio en el juego con prueba de concepto | 2.85h | 2018-11-22 09:00 A | 2018-11-22 11:51 A |  | 100% |  | 2018-11-22 09:00 | 2018-11-22 11:51 | 2.85h |  |  |  | David Ramón Sevilla [15%]; Jose Ramon Barea Cecilia [15%]; Débora Galdeano González [15%]; María Sánchez Marqués [15%] | 1.71h | 1.71h | 46.2 | 46.2 | 46.2 |  |  |  |
| 104 | 3.4.8 | [V1]Sistema de distribución central de tiempo de proceso (Scheduling) | 41h | 2018-11-27 12:00 A | 2018-12-04 13:00 |  | 25% | 30.75h | 2018-11-27 12:00 | 2018-12-04 13:00 | 41h | 104.5d | 6.5d | start no earlier than 2018-11-27 12:00 |  |  |  |  |  |  | 41 h | Jose vicente, David ramon | 2.5 |
| 105 | 3.4.9 | [V2]Diseño e implementación b.objetos (4/10) | 7h | 2018-11-22 09:00 A | 2018-11-22 18:00 A |  | 100% |  | 2018-11-22 09:00 | 2018-11-22 18:00 | 7h |  |  |  | Todos [5%] | 0.35h | 0.35h |  |  |  | 7 h | todos |  |
| 106 | 3.4.10 | [v2]Diseño e implementacion b.componentes 3 | 10h | 2018-11-22 09:00 A | 2018-11-23 11:00 A |  | 100% |  | 2018-11-22 09:00 | 2018-11-23 11:00 | 10h |  |  |  | Todos [5%] | 0.5h | 0.5h |  |  |  | 10 h | todos | 10 |
| 107 | 3.4.11 | [V2]Uso de trazado de rayos y otros tests de las físicas | 17h | 2018-11-30 15:00 | 2018-12-04 16:00 |  |  |  | 2018-11-30 15:00 | 2018-12-04 16:00 | 17h | 109.38d |  | start no earlier than 2018-11-30 13:00 |  |  |  |  |  |  | 17 h | jose ramon, maria |  |

| ID | WBS | Task | Type | Duration | Start | Finish | Predecessors | Complete | Remaining | Baseline start | Baseline finish | Baseline duration | Total slack | Free slack | Constraint | Resources | Work | Actual work | Cost | Baseline cost | Actual cost | Horas Estimadas | Encargados | Horas realizadas |
| --- | --- | --- | --- | --- | --- | --- | --- | --- | --- | --- | --- | --- | --- | --- | --- | --- | --- | --- | --- | --- | --- | --- | --- | --- |
| 108 | 3.4.12 | **[V2]Mecánicas de puzzles** |  | 4d | 2018-11-30 09:00 A | 2018-12-05 19:00 |  | 75% | 1d | 2018-11-30 09:00 | 2018-12-05 19:00 | 4d | 108d |  |  |  |  |  |  |  |  | 30 h | marines | 26.6 |
| 109 | 3.4.12.1 | Investigacion |  | 10h | 2018-11-30 09:00 A | 2018-12-03 11:00 A |  | 100% |  | 2018-11-30 09:00 | 2018-12-03 11:00 | 10h |  |  | start no earlier than 2018-11-29 23:00 |  |  |  |  |  |  | 10 h |  |  |
| 110 | 3.4.12.2 | Implementacion |  | 22h | 2018-12-03 11:00 A | 2018-12-05 19:00 | 109 | 64% | 8h | 2018-12-03 11:00 | 2018-12-05 19:00 | 22h | 108d |  |  |  |  |  |  |  |  | 22 h |  |  |
| 111 | 3.4.13 | [PM] Presentacion de Licencias de programas |  | 10h | 2018-11-22 09:00 A | 2018-11-23 11:00 A |  | 100% |  | 2018-11-22 09:00 | 2018-11-23 11:00 | 10h |  |  |  | Todos [10%] | 1h | 1h |  |  |  | 10 h | todos | 41.6 |
| 112 | 3.4.14 | [PM]Registrar tiempos y % de realización de tareas en Project |  | 48min | 2018-12-04 18:12 A | 2018-12-04 19:00 A |  | 100% |  | 2018-12-04 18:12 | 2018-12-04 19:00 | 48min |  |  | finish no earlier than 2018-12-04 19:00 | David Ramón Sevilla [2%]; Débora Galdeano González [2%]; Jose Ramon Barea Cecilia [2%]; Jose Vicente Anton Coy [2%]; María Sánchez Marqués [2%]; Marines Ánton Castelló [2%] | 0.1h | 0.1h | 4.18 | 4.18 | 4.18 | 48 h | todos | 30 m |
| 113 | 3.5 | **Iteracion 7** |  | 11d | 2018-12-07 09:00 A | 2018-12-21 19:00 |  | 61% | 4.24d | 2018-12-07 09:00 | 2018-12-21 19:00 | 11d | 96d |  |  |  | 126.71h | 45.31h | 2,679.63 | 2,679.63 | 1,090.83 |  |  |  |
| 114 | 3.5.1 | [PM]Detallar plan iteraciones del mes de Diciembre. Creación Subtareas y precedencias en Project |  | 23.04h | 2018-12-07 09:00 A | 2018-12-11 18:02 |  |  | 23.04h | 2018-12-07 09:00 | 2018-12-11 18:02 | 23.04h | 104.12d |  | start no earlier than 2018-12-07 09:00 | David Ramón Sevilla [10%]; Jose Ramon Barea Cecilia [5%]; Jose Vicente Anton Coy [10%] |  |  | 4.6 | 4.6 | 2.8 | 23 h | David , Jose vicente | 3 h |
| 115 | 3.5.2 | [PM]Detallar plan iteraciones del mes de Diciembre. Asignar recursos a las tareas en Project |  | 23.04h | 2018-12-11 18:02 A | 2018-12-14 17:04 A | 114 | 100% |  | 2018-12-11 18:02 | 2018-12-14 17:04 | 23.04h |  |  | start no earlier than 2018-12-07 09:00 | David Ramón Sevilla [5%]; Jose Vicente Anton Coy [5%] |  |  | 0.9 | 0.9 | 0.9 | 23 h | David , Jose vicente | 3 h |
| 116 | 3.5.3 | [v2]Control de player colisiones |  | 10h | 2018-12-07 09:00 A | 2018-12-10 11:00 A |  | 100% |  | 2018-12-07 09:00 | 2018-12-10 11:00 | 10h |  |  | start no earlier than 2018-12-07 09:00 | Jose Ramon Barea Cecilia [50%]; María Sánchez Marqués [50%] | 10h | 10h | 220 | 220 | 220 | 10 h | Jose ramon | 18 h |
| 117 | 3.5.4 | [v1] percepcion visual |  | 10h | 2018-12-07 09:00 A | 2018-12-10 11:00 A |  | 100% |  | 2018-12-07 09:00 | 2018-12-10 11:00 | 10h |  |  | start no earlier than 2018-12-07 09:00 | Jose Vicente Anton Coy [50%] | 5h | 5h | 99 | 99 | 99 | 10 h | jose vicente | 8.6 h |
| 118 | 3.5.5 | [v2]Mecanicas de puzzle 2/2 |  | 5h | 2018-12-07 09:00 A | 2018-12-07 16:00 A |  | 100% |  | 2018-12-07 09:00 | 2018-12-07 16:00 | 5h |  |  | start no earlier than 2018-12-07 09:00 | Marines Ánton Castelló [50%] | 2.5h | 2.5h | 54 | 54 | 54 | 5 h | marines | 48.5 h |
| 119 | 3.5.6 | [v2]Mecanicas de Accion |  | 32h | 2018-12-10 09:00 A | 2018-12-13 19:00 A |  | 100% |  | 2018-12-10 09:00 | 2018-12-13 19:00 | 32h |  |  | start no earlier than 2018-12-10 09:00 | Débora Galdeano González [40%]; David Ramón Sevilla [40%]; Jose Ramon Barea Cecilia [40%] |  |  | 15.2 | 15.2 | 15.2 | 32 h | Debora, David, Jose ramon | 81 h |
| 120 | 3.5.7 | [V2]Mecánicas de rol |  | 30h | 2018-12-10 09:00 A | 2018-12-13 17:00 A |  | 100% |  | 2018-12-10 09:00 | 2018-12-13 17:00 | 30h |  |  | start no earlier than 2018-12-10 09:00 | María Sánchez Marqués [40%]; Marines Ánton Castelló [40%]; Jose Vicente Anton Coy [40%] |  |  | 14.4 | 14.4 | 14.4 | 30 h | Maria, Marines, Jose vicente | 34.5 |
| 121 | 3.5.8 | **[TDS]Realizar sonidos para el juego 5/7** |  | 0.36d | 2018-12-07 09:00 A | 2018-12-07 11:51 A |  | 100% |  | 2018-12-07 09:00 | 2018-12-07 11:51 | 0.36d |  |  | start no earlier than 2018-12-07 09:00 | Débora Galdeano González [8%]; David Ramón Sevilla [8%]; María Sánchez Marqués [8%]; Jose Ramon Barea Cecilia [8%] | 10.71h | 10.71h | 304.63 | 304.63 | 304.63 | 15 h | Debora, David, Maria, Jose ramon | 21.6 h |
| 122 | 3.5.8.1 | Síntesis |  | 2.85h | 2018-12-07 09:00 A | 2018-12-07 11:51 A |  | 100% |  | 2018-12-07 09:00 | 2018-12-07 11:51 | 2.85h |  |  |  | David Ramón Sevilla [15%]; Jose Ramon Barea Cecilia [15%]; Débora Galdeano González [15%]; María Sánchez Marqués [15%] | 1.71h | 1.71h | 46.2 | 46.2 | 46.2 |  |  |  |
| 123 | 3.5.8.2 | Grabaciones propias |  | 2.85h | 2018-12-07 09:00 A | 2018-12-07 11:51 A |  | 100% |  | 2018-12-07 09:00 | 2018-12-07 11:51 | 2.85h |  |  |  | David Ramón Sevilla [15%]; Jose Ramon Barea Cecilia [15%]; Débora Galdeano González [15%]; María Sánchez Marqués [15%] | 1.71h | 1.71h | 46.2 | 46.2 | 46.2 |  |  |  |
| 124 | 3.5.8.3 | Sonidos externos |  | 2.85h | 2018-12-07 09:00 A | 2018-12-07 11:51 A |  | 100% |  | 2018-12-07 09:00 | 2018-12-07 11:51 | 2.85h |  |  |  | David Ramón Sevilla [15%]; Jose Ramon Barea Cecilia [15%]; Débora Galdeano González [15%]; María Sánchez Marqués [15%] | 1.71h | 1.71h | 46.2 | 46.2 | 46.2 |  |  |  |
| 125 | 3.5.8.4 | Música |  | 2.85h | 2018-12-07 09:00 A | 2018-12-07 11:51 A |  | 100% |  | 2018-12-07 09:00 | 2018-12-07 11:51 | 2.85h |  |  |  | David Ramón Sevilla [15%]; Jose Ramon Barea Cecilia [15%]; Débora Galdeano González [15%]; María Sánchez Marqués [15%] | 1.71h | 1.71h | 46.2 | 46.2 | 46.2 |  |  |  |
| 126 | 3.5.8.5 | Cue Sheet |  | 1.42h | 2018-12-07 09:00 A | 2018-12-07 10:25 A |  | 100% |  | 2018-12-07 09:00 | 2018-12-07 10:25 | 1.42h |  |  |  | David Ramón Sevilla [15%]; Jose Ramon Barea Cecilia [15%]; Débora Galdeano González [15%]; María Sánchez Marqués [15%] | 0.85h | 0.85h | 29.04 | 29.04 | 29.04 |  |  |  |
| 127 | 3.5.8.6 | Hoja de metadatos |  | 1.42h | 2018-12-07 09:00 A | 2018-12-07 10:25 A |  | 100% |  | 2018-12-07 09:00 | 2018-12-07 10:25 | 1.42h |  |  |  | David Ramón Sevilla [15%]; Jose Ramon Barea Cecilia [15%]; Débora Galdeano González [15%]; María Sánchez Marqués [15%] | 0.85h | 0.85h | 29.04 | 29.04 | 29.04 |  |  |  |
| 128 | 3.5.8.7 | Integración del motor de audio en el juego con prueba de concepto |  | 2.85h | 2018-12-07 09:00 A | 2018-12-07 11:51 A |  | 100% |  | 2018-12-07 09:00 | 2018-12-07 11:51 | 2.85h |  |  |  | David Ramón Sevilla [15%]; Jose Ramon Barea Cecilia [15%]; Débora Galdeano González [15%]; María Sánchez Marqués [15%] | 1.71h | 1.71h | 46.2 | 46.2 | 46.2 |  |  |  |
| 129 | 3.5.9 | [V2]Diseño e implementación b.objetos (5/10) |  | 7h | 2018-12-07 09:00 A | 2018-12-07 18:00 A |  | 100% |  | 2018-12-07 09:00 | 2018-12-07 18:00 | 7h |  |  | start no earlier than 2018-12-07 09:00 | Jose Ramon Barea Cecilia [5%]; Jose Vicente Anton Coy [5%]; David Ramón Sevilla [5%]; María Sánchez Marqués [5%]; Marines Ánton Castelló [5%]; Débora Galdeano González [5%] |  |  | 4.8 | 4.8 | 4.8 | 7 h | Todos | 7h |
| 130 | 3.5.10 | [v2]Diseño e implementacion b.componentes 5 |  | 10h | 2018-12-07 09:00 A | 2018-12-10 11:00 A |  | 100% |  | 2018-12-07 09:00 | 2018-12-10 11:00 | 10h |  |  | start no earlier than 2018-12-07 09:00 | Jose Ramon Barea Cecilia [8%]; Jose Vicente Anton Coy [8%]; David Ramón Sevilla [8%]; María Sánchez Marqués [8%]; Marines Ánton Castelló [8%]; Débora Galdeano González [8%] |  |  | 7.68 | 7.68 | 7.68 | 10 h | Todos | 10 h |
| 131 | 3.5.11 | [v2]Uso de sistema de depuración visual de las físicas |  | 10h | 2018-12-11 09:00 | 2018-12-12 11:00 |  |  |  | 2018-12-11 09:00 | 2018-12-12 11:00 | 10h | 103.75d |  | start no earlier than 2018-12-11 09:00 | David Ramón Sevilla [40%]; Jose Vicente Anton Coy [40%] | 8h |  | 158.4 | 158.4 |  | 10 h | Jose Vicente, David ramon |  |
| 132 | 3.5.12 | [v1]Gestión de recursos de IA con Level-of-Detail (LoD) |  | 40h | 2018-12-13 09:00 | 2018-12-19 19:00 | 104 |  |  | 2018-12-13 09:00 | 2018-12-19 19:00 | 40h | 98d |  | start no earlier than 2018-12-13 09:00 | David Ramón Sevilla [40%]; Marines Ánton Castelló [40%] | 32h |  | 590.4 | 590.4 |  | 40 h | David ramon, Marines |  |
| 133 | 3.5.13 | [v2]Power-ups y elementos adicionales |  | 28h | 2018-12-13 09:00 | 2018-12-18 13:00 |  |  |  | 2018-12-13 09:00 | 2018-12-18 13:00 | 28h | 99.5d |  | start no earlier than 2018-12-13 09:00 | Débora Galdeano González [40%]; María Sánchez Marqués [40%] | 22.4h |  | 487.2 | 487.2 |  | 28 h | Debora, Maria |  |
| 134 | 3.5.14 | [V1]Sistema de distribución central de tiempo de proceso (Scheduling) |  | 38h | 2018-12-17 09:00 | 2018-12-21 17:00 |  |  |  | 2018-12-17 09:00 | 2018-12-21 17:00 | 38h | 96.25d |  | start no earlier than 2018-12-15 09:00 | David Ramón Sevilla [50%] | 19h |  | 351 | 351 |  | 38 h | david ramon | 4 h |
| 135 | 3.5.15 | [V2]Uso de trazado de rayos y otros tests de las físicas |  | 17h | 2018-12-17 09:00 A | 2018-12-19 10:00 A |  | 100% |  | 2018-12-17 09:00 | 2018-12-19 10:00 | 17h |  |  | start no earlier than 2018-12-17 09:00 | Jose Ramon Barea Cecilia [50%]; María Sánchez Marqués [50%] | 17h | 17h | 360 | 360 | 360 | 17 h | jose ramon | 10 h |
| 136 | 3.5.16 | [PD]Cartel juego/proyecto |  | 60h | 2018-12-10 09:00 A | 2018-12-19 13:00 A |  | 100% |  | 2018-12-10 09:00 | 2018-12-19 13:00 | 60h |  |  | start no earlier than 2018-12-10 09:00 | Jose Ramon Barea Cecilia [6%]; Marines Ánton Castelló [6%]; Jose Vicente Anton Coy [6%]; David Ramón Sevilla [6%] |  |  | 3.24 | 3.24 | 3.24 | 60 h | Jose ramon, marines, jose vicente, david | 8 h |
| 137 | 3.5.17 | [PM]Registrar tiempos y % de realización de tareas en Project |  | 48min | 2018-12-21 18:12 A | 2018-12-21 19:00 A |  | 100% |  | 2018-12-21 18:12 | 2018-12-21 19:00 | 48min |  |  | finish no earlier than 2018-12-21 19:00 | David Ramón Sevilla [2%]; Débora Galdeano González [2%]; Jose Ramon Barea Cecilia [2%]; Jose Vicente Anton Coy [2%]; María Sánchez Marqués [2%]; Marines Ánton Castelló [2%] | 0.1h | 0.1h | 4.18 | 4.18 | 4.18 | 48 h | todos | 30 m |
| 138 | 3.6 | [PM]Comparar la planificación prevista y real en Project hito 1 |  | 21.6h | 2018-10-01 09:00 | 2018-10-03 16:36 |  |  |  | 2018-10-01 09:00 | 2018-10-03 16:36 | 21.6h | 147d | 0d |  |  |  |  |  |  |  |  |  |  |
| 139 | 3.7 | [PM]Confeccionar Informes de iteración e informe resumen de Hito 1 |  | 21.6h | 2018-10-03 16:36 | 2018-10-08 12:12 | 138 |  |  | 2018-10-03 16:36 | 2018-10-08 12:12 | 21.6h | 147d | 0d |  |  |  |  |  |  |  |  |  |  |
| 140 | 3.8 | [PM]Elaborar la presentación del Hito 1 |  | 14.4h | 2018-10-08 12:12 | 2018-10-10 10:36 | 139 |  |  | 2018-10-08 12:12 | 2018-10-10 10:36 | 14.4h | 147d | 0d |  |  |  |  |  |  |  |  |  |  |
| 141 | 3.9 | [PM]Exponer la presentación del Hito 1 |  | 14.4h | 2018-10-10 10:36 | 2018-10-11 19:00 | 140 |  |  | 2018-10-10 10:36 | 2018-10-11 19:00 | 14.4h | 147d |  |  |  |  |  |  |  |  |  |  |  |
| 142 | 4 | Versión Alpha de mecánicas | milestone | 0d | 2018-12-22 09:00 | 2018-12-22 09:00 | 11 |  |  | 2018-12-22 09:00 | 2018-12-22 09:00 | 0d | 96d |  | start no earlier than 2018-12-22 09:00 |  |  |  |  |  |  |  |  |  |

Notes:
- 112: Se han realizado en excel por comodidad, las proximas en toggl
- 137: Se han realizado en excel por comodidad, las proximas en toggl

| ID | WBS | Task | Duration | Start | Finish | Predecessors | Complete | Remaining | Baseline start | Baseline finish | Baseline duration | Total slack | Free slack | Constraint | Deadline | Resources | Work | Actual work | Cost | Baseline cost | Actual cost | Horas Estimadas | Encargados | Horas realizadas |
| --- | --- | --- | --- | --- | --- | --- | --- | --- | --- | --- | --- | --- | --- | --- | --- | --- | --- | --- | --- | --- | --- | --- | --- | --- |
| 143 | 5 | **Hito 2** | 25d | 2018-12-24 09:00 A | 2019-01-25 19:00 |  | 70% | 7.39d | 2018-12-24 09:00 | 2019-01-25 19:00 | 25d | 0d |  |  | 2019-01-25 19:00 |  | 378.06h | 305.66h | 7,812.48 | 7,812.48 | 6,375.65 |  |  |  |
| 144 | 5.1 | **Navidad** | 10d | 2018-12-24 09:00 A | 2019-01-06 19:00 |  | 61% | 3.9d | 2018-12-24 09:00 | 2019-01-06 19:00 | 10d | 15d |  | start no earlier than 2018-12-22 09:00 |  |  | 129.97h | 82.37h | 2,651.82 | 2,651.82 | 1,752.22 |  |  |  |
| 145 | 5.1.1 | [PM]Detallar plan iteraciones del mes de Enero. Creación Subtareas y precedencias en Project | 46h | 2018-12-24 09:00 A | 2018-12-31 17:00 |  | 50% | 23h | 2018-12-24 09:00 | 2018-12-31 17:00 | 46h | 19.25d |  |  |  | Jose Vicente Anton Coy [5%]; María Sánchez Marqués [5%]; Jose Ramon Barea Cecilia [5%] | 6.9h | 3.45h | 136.3 | 136.3 | 69.6 | 23 h | Maria, Jose vicente, Jose ramon |  |
| 146 | 5.1.2 | [PM]Detallar plan iteraciones del mes de Enero. Asignar recursos a las tareas en Project | 46h | 2018-12-28 09:00 A | 2019-01-04 17:00 |  | 50% | 23h | 2018-12-28 09:00 | 2019-01-04 17:00 | 46h | 15.25d |  | start no earlier than 2018-12-28 09:00 |  | Jose Ramon Barea Cecilia [5%]; Jose Vicente Anton Coy [5%]; María Sánchez Marqués [5%] | 6.9h | 3.45h | 136.3 | 136.3 | 69.6 | 23 h | Maria, Jose vicente, Jose ramon |  |
| 147 | 5.1.3 | [V2]Implementación del HUD | 24h | 2018-12-24 09:00 A | 2018-12-26 19:00 A |  | 100% |  | 2018-12-24 09:00 | 2018-12-26 19:00 | 24h |  |  |  |  | Jose Vicente Anton Coy [40%]; María Sánchez Marqués [40%] | 19.2h | 19.2h | 380 | 380 | 380 |  | Jose Vicente, Maria |  |
| 148 | 5.1.4 | [v1]Gestión de recursos de IA con Level-of-Detail (LoD) | 40h | 2018-12-28 09:00 A | 2019-01-03 19:00 |  | 50% | 20h | 2018-12-28 09:00 | 2019-01-03 19:00 | 40h | 16d |  | start no earlier than 2018-12-28 09:00 |  | David Ramón Sevilla [40%]; Marines Ánton Castelló [40%] | 32h | 16h | 590.4 | 590.4 | 302.4 | 40 h | David ramon, Marines |  |
| 149 | 5.1.5 | [v2]Power-ups y elementos adicionales | 28h | 2018-12-31 09:00 A | 2019-01-03 13:00 |  | 50% | 14h | 2018-12-31 09:00 | 2019-01-03 13:00 | 28h | 16.5d |  | start no earlier than 2018-12-31 09:00 |  | Débora Galdeano González [40%]; María Sánchez Marqués [40%] | 22.4h | 11.2h | 487.2 | 487.2 | 252 | 28 h | Debora, Maria |  |
| 150 | 5.1.6 | [V1]Sistema de distribución central de tiempo de proceso (Scheduling) | 38h | 2018-12-31 09:00 A | 2019-01-04 17:00 |  | 50% | 19h | 2018-12-31 09:00 | 2019-01-04 17:00 | 38h | 15.25d |  | start no earlier than 2018-12-31 09:00 |  | David Ramón Sevilla [50%] | 19h | 9.5h | 351 | 351 | 180 | 38 h | david ramon |  |
| 151 | 5.1.7 | [V2]Diseño e implementación b.objetos (6/10) | 7h | 2018-12-24 09:00 A | 2018-12-24 18:00 A |  | 100% |  | 2018-12-24 09:00 | 2018-12-24 18:00 | 7h |  |  |  |  | Jose Ramon Barea Cecilia [4%]; Jose Vicente Anton Coy [4%]; David Ramón Sevilla [4%]; María Sánchez Marqués [4%]; Marines Ánton Castelló [4%]; Débora Galdeano González [4%] | 1.68h | 1.68h | 37.12 | 37.12 | 37.12 | 7 h | todos |  |
| 152 | 5.1.8 | [v2]Diseño e implementacion b.componentes 6 | 10h | 2018-12-24 09:00 A | 2018-12-25 11:00 A |  | 100% |  | 2018-12-24 09:00 | 2018-12-25 11:00 | 10h |  |  |  |  | David Ramón Sevilla [4%]; Débora Galdeano González [4%]; Jose Ramon Barea Cecilia [4%]; Jose Vicente Anton Coy [4%]; María Sánchez Marqués [4%]; Marines Ánton Castelló [4%] | 2.4h | 2.4h | 51.04 | 51.04 | 51.04 | 10 h | todos |  |
| 153 | 5.1.9 | [v2]Uso de sistema de depuración visual de las físicas | 10h | 2018-12-24 09:00 A | 2018-12-25 11:00 |  | 50% | 5h | 2018-12-24 09:00 | 2018-12-25 11:00 | 10h | 23.75d |  |  |  | David Ramón Sevilla [40%]; Jose Vicente Anton Coy [40%] | 8h | 4h | 158.4 | 158.4 | 86.4 | 10 h | Jose Vicente, David ramon |  |
| 154 | 5.1.10 | **[TDS]Realizar sonidos para el juego 6/7** | 0.36d | 2018-12-24 09:00 A | 2018-12-24 11:51 A |  | 100% |  | 2018-12-24 09:00 | 2018-12-24 11:51 | 0.36d |  |  |  |  | Débora Galdeano González [10%]; María Sánchez Marqués [10%]; Jose Ramon Barea Cecilia [10%]; David Ramón Sevilla [10%] | 11.39h | 11.39h | 319.88 | 319.88 | 319.88 | 15 h | Debora, Maria, Jose ramon, David ramon |  |
| 155 | 5.1.10.1 | Síntesis | 2.85h | 2018-12-24 09:00 A | 2018-12-24 11:51 A |  | 100% |  | 2018-12-24 09:00 | 2018-12-24 11:51 | 2.85h |  |  |  |  | David Ramón Sevilla [15%]; Jose Ramon Barea Cecilia [15%]; Débora Galdeano González [15%]; María Sánchez Marqués [15%] | 1.71h | 1.71h | 46.2 | 46.2 | 46.2 |  |  |  |
| 156 | 5.1.10.2 | Grabaciones propias | 2.85h | 2018-12-24 09:00 A | 2018-12-24 11:51 A |  | 100% |  | 2018-12-24 09:00 | 2018-12-24 11:51 | 2.85h |  |  |  |  | David Ramón Sevilla [15%]; Jose Ramon Barea Cecilia [15%]; Débora Galdeano González [15%]; María Sánchez Marqués [15%] | 1.71h | 1.71h | 46.2 | 46.2 | 46.2 |  |  |  |
| 157 | 5.1.10.3 | Sonidos externos | 2.85h | 2018-12-24 09:00 A | 2018-12-24 11:51 A |  | 100% |  | 2018-12-24 09:00 | 2018-12-24 11:51 | 2.85h |  |  |  |  | David Ramón Sevilla [15%]; Jose Ramon Barea Cecilia [15%]; Débora Galdeano González [15%]; María Sánchez Marqués [15%] | 1.71h | 1.71h | 46.2 | 46.2 | 46.2 |  |  |  |
| 158 | 5.1.10.4 | Música | 2.85h | 2018-12-24 09:00 A | 2018-12-24 11:51 A |  | 100% |  | 2018-12-24 09:00 | 2018-12-24 11:51 | 2.85h |  |  |  |  | David Ramón Sevilla [15%]; Jose Ramon Barea Cecilia [15%]; Débora Galdeano González [15%]; María Sánchez Marqués [15%] | 1.71h | 1.71h | 46.2 | 46.2 | 46.2 |  |  |  |
| 159 | 5.1.10.5 | Cue Sheet | 1.42h | 2018-12-24 09:00 A | 2018-12-24 10:25 A |  | 100% |  | 2018-12-24 09:00 | 2018-12-24 10:25 | 1.42h |  |  |  |  | David Ramón Sevilla [15%]; Jose Ramon Barea Cecilia [15%]; Débora Galdeano González [15%]; María Sánchez Marqués [15%] | 0.85h | 0.85h | 29.04 | 29.04 | 29.04 |  |  |  |
| 160 | 5.1.10.6 | Hoja de metadatos | 1.42h | 2018-12-24 09:00 A | 2018-12-24 10:25 A |  | 100% |  | 2018-12-24 09:00 | 2018-12-24 10:25 | 1.42h |  |  |  |  | David Ramón Sevilla [15%]; Jose Ramon Barea Cecilia [15%]; Débora Galdeano González [15%]; María Sánchez Marqués [15%] | 0.85h | 0.85h | 29.04 | 29.04 | 29.04 |  |  |  |
| 161 | 5.1.10.7 | Integración del motor de audio en el juego con prueba de concepto | 2.85h | 2018-12-24 09:00 A | 2018-12-24 11:51 A |  | 100% |  | 2018-12-24 09:00 | 2018-12-24 11:51 | 2.85h |  |  |  |  | David Ramón Sevilla [15%]; Jose Ramon Barea Cecilia [15%]; Débora Galdeano González [15%]; María Sánchez Marqués [15%] | 1.71h | 1.71h | 46.2 | 46.2 | 46.2 |  |  |  |
| 162 | 5.1.11 | [PM]Registrar tiempos y % de realización de tareas en Project | 48min | 2019-01-04 18:12 A | 2019-01-06 19:00 A | 148 | 100% |  | 2019-01-04 18:12 | 2019-01-06 19:00 | 48min |  |  | finish no earlier than 2019-01-06 19:00 |  | David Ramón Sevilla [2%]; Débora Galdeano González [2%]; Jose Ramon Barea Cecilia [2%]; Jose Vicente Anton Coy [2%]; María Sánchez Marqués [2%]; Marines Ánton Castelló [2%] | 0.1h | 0.1h | 4.18 | 4.18 | 4.18 | 48 h | todos |  |
| 163 | 5.2 | **Iteracion 8** | 15d | 2019-01-07 09:00 A | 2019-01-25 19:00 |  | 76% | 3.65d | 2019-01-07 09:00 | 2019-01-25 19:00 | 15d | 0d |  | start no earlier than 2019-01-07 09:00 |  |  | 246.39h | 221.94h | 5,119.67 | 5,119.67 | 4,589.44 |  |  |  |
| 164 | 5.2.1 | [PM]Detallar plan iteraciones del mes de Enero. Asignar recursos a las tareas en Project | 9.6h | 2019-01-14 09:00 A | 2019-01-15 10:36 |  | 63% | 3.6h | 2019-01-14 09:00 | 2019-01-15 10:36 | 9.6h | 8.8d |  | start no earlier than 2019-01-14 09:00 |  | Jose Ramon Barea Cecilia [20%] | 1.92h | 1.2h | 42.4 | 42.4 | 28 | 9,6 h |  | 6h |
| 165 | 5.2.2 | [PM]Detallar plan iteraciones del mes de Enero. Creación Subtareas y precedencias en Project | 9.6h | 2019-01-14 09:00 A | 2019-01-15 10:36 |  | 63% | 3.6h | 2019-01-14 09:00 | 2019-01-15 10:36 | 9.6h | 8.8d |  | start no earlier than 2019-01-14 09:00 |  | Jose Ramon Barea Cecilia [20%] | 1.92h | 1.2h | 42.4 | 42.4 | 28 | 9,6 h |  | 6h |
| 166 | 5.2.3 | [PM]Revisar especificación proyecto | 19h | 2019-01-14 09:00 A | 2019-01-16 12:00 |  | 68% | 6h | 2019-01-14 09:00 | 2019-01-16 12:00 | 19h | 7.62d |  | start no earlier than 2019-01-14 09:00 |  | María Sánchez Marqués [8.6%] | 1.63h | 1.11h | 34.29 | 34.29 | 24 | 28 |  | 13 h |
| 167 | 5.2.4 | [PM]Reestimar proyecto | 19h | 2019-01-14 09:00 A | 2019-01-16 12:00 |  | 47% | 10h | 2019-01-14 09:00 | 2019-01-16 12:00 | 19h | 7.62d |  | start no earlier than 2019-01-14 09:00 |  | María Sánchez Marqués [8.6%] | 1.63h | 0.77h | 34.29 | 34.29 | 17.14 | 28 h |  | 9 h |
| 168 | 5.2.5 | [PM]Registrar tiempos y % de realización de tareas en Project | 48min | 2019-01-14 09:00 A | 2019-01-14 09:48 A |  | 100% |  | 2019-01-14 09:00 | 2019-01-14 09:48 | 48min |  |  | start no earlier than 2019-01-14 09:00 |  | David Ramón Sevilla [4%]; Débora Galdeano González [4%]; Jose Ramon Barea Cecilia [4%]; Jose Vicente Anton Coy [4%]; María Sánchez Marqués [4%]; Marines Ánton Castelló [4%] | 0.19h | 0.19h | 8.35 | 8.35 | 8.35 | 6 h | todos | 30 m |
| 169 | 5.2.6 | [general] Mejoras y optimizacion del codigo | 82h | 2019-01-07 09:00 A | 2019-01-21 11:00 A |  | 100% |  | 2019-01-07 09:00 | 2019-01-21 11:00 | 82h |  |  |  |  | Jose Ramon Barea Cecilia [1%]; Jose Vicente Anton Coy [8%]; María Sánchez Marqués [2%]; Marines Ánton Castelló [18%]; David Ramón Sevilla [13%]; Débora Galdeano González [61%] | 82h | 82h | 1,669.24 | 1,669.24 | 1,669.24 |  |  |  |
| 170 | 5.2.7 | [V2]Diseño e implementación b.objetos (7/10) | 7h | 2019-01-14 09:00 A | 2019-01-14 18:00 A |  | 100% |  | 2019-01-14 09:00 | 2019-01-14 18:00 | 7h |  |  | start no earlier than 2019-01-14 09:00 |  | David Ramón Sevilla [16%]; María Sánchez Marqués [2%]; Marines Ánton Castelló [20%]; Jose Ramon Barea Cecilia [1%]; Jose Vicente Anton Coy [10%]; Débora Galdeano González [51%] | 7h | 7h | 160.8 | 160.8 | 160.8 |  | Todos |  |
| 171 | 5.2.8 | [v2]Diseño e implementacion b.componentes 7 | 10h | 2019-01-14 09:00 A | 2019-01-15 11:00 A |  | 100% |  | 2019-01-14 09:00 | 2019-01-15 11:00 | 10h |  |  | start no earlier than 2019-01-14 09:00 |  | Jose Ramon Barea Cecilia [1%]; David Ramón Sevilla [16%]; Jose Vicente Anton Coy [11%]; María Sánchez Marqués [2%]; Marines Ánton Castelló [21%]; Débora Galdeano González [57%] | 10.8h | 10.8h | 239.59 | 239.59 | 239.59 |  | Todos |  |
| 172 | 5.2.9 | [V1]Sistema de logros y puntuaciones web | 40h | 2019-01-14 09:00 A | 2019-01-18 19:00 A |  | 100% |  | 2019-01-14 09:00 | 2019-01-18 19:00 | 40h |  |  | start no earlier than 2019-01-14 09:00 |  | Jose Vicente Anton Coy [20%] | 8h | 8h | 147.6 | 147.6 | 147.6 | 40 h |  | 54 h |
| 173 | 5.2.10 | [V2]Integración de librería para GUI | 6h | 2019-01-14 09:00 A | 2019-01-14 17:00 A |  | 100% |  | 2019-01-14 09:00 | 2019-01-14 17:00 | 6h |  |  | start no earlier than 2019-01-14 09:00 |  | Jose Vicente Anton Coy [5%] | 0.3h | 0.3h | 6.3 | 6.3 | 6.3 | 6 h | Marines, Debora | 12 h |
| 174 | 5.2.11 | [RV]Modelado de los personajes | 60h | 2019-01-14 09:00 A | 2019-01-23 13:00 |  | 10% | 54h | 2019-01-14 09:00 | 2019-01-23 13:00 | 60h | 0.12d | 0d | start no earlier than 2019-01-14 09:00 |  | Débora Galdeano González [30%] | 18h | 1.8h | 402.6 | 402.6 | 46.2 | 60 h | Maria, Jose ramon | 6 h |
| 175 | 5.2.12 | [v2]Power-ups y elementos adicionales | 30h | 2019-01-07 09:00 A | 2019-01-10 17:00 |  | 56% | 13.2h | 2019-01-07 09:00 | 2019-01-10 17:00 | 30h | 11.25d |  |  |  | Débora Galdeano González [20%] | 6h | 3.36h | 136.4 | 136.4 | 78.32 |  |  |  |
| 176 | 5.2.13 | [RV]Texturizado de los personajes | 20h | 2019-01-23 15:00 A | 2019-01-25 19:00 | 174 | 5% | 19h | 2019-01-23 15:00 | 2019-01-25 19:00 | 20h | 0d |  | start no earlier than 2019-01-21 09:00 |  | Débora Galdeano González [10%] | 2h | 0.1h | 46.2 | 46.2 | 4.4 | 40 h | Debora |  |

Notes:
- 145: El plan de iteracion se realizo al final de la iteracion 7 realmente por el project manager anterior, ahora la pongo como 50% completada y el resto es el otro 50% de la iteracion 8
- 162: Se han realizado en excel por comodidad, las proximas en toggl
- 168: Se han realizado en excel por comodidad, las proximas en toggl

| ID | WBS | Task | Type | Duration | Start | Finish | Predecessors | Complete | Remaining | Baseline start | Baseline finish | Baseline duration | Total slack | Free slack | Constraint | Resources | Work | Actual work | Cost | Baseline cost | Actual cost | Encargados | Horas Estimadas | Horas realizadas |
| --- | --- | --- | --- | --- | --- | --- | --- | --- | --- | --- | --- | --- | --- | --- | --- | --- | --- | --- | --- | --- | --- | --- | --- | --- |
| 177 | 5.2.14 | **[TDS]Realizar sonidos para el juego 7/7** |  | 0.36d | 2019-01-07 09:00 A | 2019-01-07 11:51 A |  | 100% |  | 2019-01-07 09:00 | 2019-01-07 11:51 | 0.36d |  |  |  | David Ramón Sevilla [7%]; Jose Ramon Barea Cecilia [30%]; María Sánchez Marqués [8%] | 11.54h | 11.54h | 323.19 | 323.19 | 323.19 | Maria, Debora, Jose ramon, David ramon |  |  |
| 178 | 5.2.14.1 | Síntesis |  | 2.85h | 2019-01-07 09:00 A | 2019-01-07 11:51 A |  | 100% |  | 2019-01-07 09:00 | 2019-01-07 11:51 | 2.85h |  |  |  | David Ramón Sevilla [15%]; Jose Ramon Barea Cecilia [15%]; Débora Galdeano González [15%]; María Sánchez Marqués [15%] | 1.71h | 1.71h | 46.2 | 46.2 | 46.2 |  |  |  |
| 179 | 5.2.14.2 | Grabaciones propias |  | 2.85h | 2019-01-07 09:00 A | 2019-01-07 11:51 A |  | 100% |  | 2019-01-07 09:00 | 2019-01-07 11:51 | 2.85h |  |  |  | David Ramón Sevilla [15%]; Jose Ramon Barea Cecilia [15%]; Débora Galdeano González [15%]; María Sánchez Marqués [15%] | 1.71h | 1.71h | 46.2 | 46.2 | 46.2 |  |  |  |
| 180 | 5.2.14.3 | Sonidos externos |  | 2.85h | 2019-01-07 09:00 A | 2019-01-07 11:51 A |  | 100% |  | 2019-01-07 09:00 | 2019-01-07 11:51 | 2.85h |  |  |  | David Ramón Sevilla [15%]; Jose Ramon Barea Cecilia [15%]; Débora Galdeano González [15%]; María Sánchez Marqués [15%] | 1.71h | 1.71h | 46.2 | 46.2 | 46.2 |  |  |  |
| 181 | 5.2.14.4 | Música |  | 2.85h | 2019-01-07 09:00 A | 2019-01-07 11:51 A |  | 100% |  | 2019-01-07 09:00 | 2019-01-07 11:51 | 2.85h |  |  |  | David Ramón Sevilla [15%]; Jose Ramon Barea Cecilia [15%]; Débora Galdeano González [15%]; María Sánchez Marqués [15%] | 1.71h | 1.71h | 46.2 | 46.2 | 46.2 |  |  |  |
| 182 | 5.2.14.5 | Cue Sheet |  | 1.42h | 2019-01-07 09:00 A | 2019-01-07 10:25 A |  | 100% |  | 2019-01-07 09:00 | 2019-01-07 10:25 | 1.42h |  |  |  | David Ramón Sevilla [15%]; Jose Ramon Barea Cecilia [15%]; Débora Galdeano González [15%]; María Sánchez Marqués [15%] | 0.85h | 0.85h | 29.04 | 29.04 | 29.04 |  |  |  |
| 183 | 5.2.14.6 | Hoja de metadatos |  | 1.42h | 2019-01-07 09:00 A | 2019-01-07 10:25 A |  | 100% |  | 2019-01-07 09:00 | 2019-01-07 10:25 | 1.42h |  |  |  | David Ramón Sevilla [15%]; Jose Ramon Barea Cecilia [15%]; Débora Galdeano González [15%]; María Sánchez Marqués [15%] | 0.85h | 0.85h | 29.04 | 29.04 | 29.04 |  |  |  |
| 184 | 5.2.14.7 | Integración del motor de audio en el juego con prueba de concepto |  | 2.85h | 2019-01-07 09:00 A | 2019-01-07 11:51 A |  | 100% |  | 2019-01-07 09:00 | 2019-01-07 11:51 | 2.85h |  |  |  | David Ramón Sevilla [15%]; Jose Ramon Barea Cecilia [15%]; Débora Galdeano González [15%]; María Sánchez Marqués [15%] | 1.71h | 1.71h | 46.2 | 46.2 | 46.2 |  |  |  |
| 185 | 5.2.15 | [v2]Uso de sistema de depuración visual de las físicas |  | 10h | 2019-01-14 09:00 A | 2019-01-15 11:00 A |  | 100% |  | 2019-01-14 09:00 | 2019-01-15 11:00 | 10h |  |  |  | Débora Galdeano González [10%] | 1h | 1h | 24.2 | 24.2 | 24.2 |  |  |  |
| 186 | 5.2.16 | [TDS]Realizar sonidos para el juego 8/7 |  | 51h | 2019-01-17 09:00 A | 2019-01-25 12:00 |  | 96% | 2h | 2019-01-17 09:00 | 2019-01-25 12:00 | 51h | 0.62d |  | start no earlier than 2019-01-17 09:00 | David Ramón Sevilla [7%]; María Sánchez Marqués [8%]; Jose Ramon Barea Cecilia [30%] | 48.25h | 47.35h | 968.56 | 968.56 | 950.84 |  | 15 h | 46 h |
| 187 | 5.2.17 | [v2]Retocar mecanicas de Accion |  | 20h | 2019-01-07 09:00 A | 2019-01-09 13:00 A |  | 100% |  | 2019-01-07 09:00 | 2019-01-09 13:00 | 20h |  |  |  | María Sánchez Marqués [20%] | 4h | 4h | 84 | 84 | 84 |  |  |  |
| 188 | 5.2.18 | [v2]Retocar Control del player: movimiento y colisiones sin motor de fisicas |  | 4h | 2019-01-08 09:00 A | 2019-01-08 13:00 A |  | 100% |  | 2019-01-08 09:00 | 2019-01-08 13:00 | 4h |  |  |  | Jose Ramon Barea Cecilia [20%] | 0.8h | 0.8h | 20 | 20 | 20 |  |  |  |
| 189 | 5.2.19 | [v2]Retocar mecanicas de puzzle 3/2 |  | 4.15h | 2019-01-08 09:00 A | 2019-01-08 15:09 A |  | 100% |  | 2019-01-08 09:00 | 2019-01-08 15:09 | 4.15h |  |  |  | Marines Ánton Castelló [10%] | 0.41h | 0.41h | 9.27 | 9.27 | 9.27 |  |  |  |
| 190 | 5.2.20 | [TAG] Aprendizaje OpenGL |  | 39h | 2019-01-14 09:00 A | 2019-01-18 18:00 A |  | 100% |  | 2019-01-14 09:00 | 2019-01-18 18:00 | 39h |  |  |  | David Ramón Sevilla | 39h | 39h | 720 | 720 | 720 |  |  |  |
| 191 | 5.3 | [PM]Comparar la planificación prevista y real en Project hito 2 |  | 4h | 2019-01-22 09:00 A | 2019-01-22 13:00 |  | 75% | 1h | 2019-01-22 09:00 | 2019-01-22 13:00 | 4h | 3.5d |  | start no earlier than 2019-01-22 09:00 | Jose Ramon Barea Cecilia [20%] | 0.8h | 0.6h | 20 | 20 | 16 |  |  |  |
| 192 | 5.4 | [PM]Confeccionar Informes de iteración e informe resumen de Hito 2 |  | 6h | 2019-01-22 09:00 A | 2019-01-22 17:00 |  | 83% | 1h | 2019-01-22 09:00 | 2019-01-22 17:00 | 6h | 3.25d |  | start no earlier than 2019-01-22 09:00 | Jose Ramon Barea Cecilia; María Sánchez Marqués [15%] | 0.9h | 0.75h | 21 | 21 | 18 |  | 6 h | 17 h |
| 193 | 6 | Version Beta del juego, que se pueda jugar | milestone | 0d | 2019-01-25 19:00 | 2019-01-25 19:00 | 143 |  |  | 2019-01-25 19:00 | 2019-01-25 19:00 | 0d | 71d |  | start no earlier than 2018-12-22 09:00 |  |  |  |  |  |  |  |  |  |
| 194 | 7 | **Hito 3** |  | 30d? | 2019-01-24 09:00 A | 2019-03-06 19:00 |  | 19% | 24.19d? | 2019-01-24 09:00 | 2019-03-06 19:00 | 30d? | 14d | 0d | finish no later than 2019-03-26 19:00 |  | 186.32h | 45.75h | 3,763.78 | 3,763.78 | 923.37 |  |  |  |
| 195 | 7.1 | **Iteracion 9** |  | 15d | 2019-01-25 09:00 A | 2019-02-14 19:00 |  | 44% | 8.4d | 2019-01-25 09:00 | 2019-02-14 19:00 | 15d | 28d |  | start no earlier than 2019-01-25 09:00 |  | 114.84h | 45.75h | 2,239.08 | 2,239.08 | 923.37 |  |  |  |
| 196 | 7.1.1 | [PM]Detallar plan iteraciones del mes de Febrero-Marzo. Creación Subtareas y precedencias en Project |  | 9.6h | 2019-01-25 09:00 A | 2019-01-28 10:36 A |  | 100% |  | 2019-01-25 09:00 | 2019-01-28 10:36 | 9.6h |  |  |  | Jose Ramon Barea Cecilia [20%] | 1.92h | 1.92h | 42.4 | 42.4 | 42.4 |  | 9,6 h | 2 h |
| 197 | 7.1.2 | [PM]Detallar plan iteraciones del mes de Febrero-Marzo Asignar recursos a las tareas en Project |  | 9.6d | 2019-01-25 09:00 A | 2019-02-07 15:48 A |  | 100% |  | 2019-01-25 09:00 | 2019-02-07 15:48 | 9.6d |  |  |  | Jose Ramon Barea Cecilia [20%] | 15.36h | 15.36h | 311.2 | 311.2 | 311.2 |  | 9,6 h | 2 h |
| 198 | 7.1.3 | [PM]Registrar tiempos y % de realización de tareas en Project |  | 48min | 2019-01-25 09:00 A | 2019-01-25 09:48 A |  | 100% |  | 2019-01-25 09:00 | 2019-01-25 09:48 | 48min |  |  |  | Todos [4%] | 0.03h | 0.03h |  |  |  |  | 6 h | 48 min |
| 199 | 7.1.4 | [general] Mejoras y optimizacion del codigo |  | 10h | 2019-01-28 09:00 A | 2019-01-29 11:00 A |  | 100% |  | 2019-01-28 09:00 | 2019-01-29 11:00 | 10h |  |  | start no earlier than 2019-01-28 09:00 | David Ramón Sevilla [4%]; Débora Galdeano González [4%]; Jose Ramon Barea Cecilia [4%]; Jose Vicente Anton Coy [4%]; María Sánchez Marqués [4%]; Marines Ánton Castelló [4%] | 2.4h | 2.4h | 51.04 | 51.04 | 51.04 |  | 10 h | 37 h |
| 200 | 7.1.5 | [V2]Diseño e implementación b.objetos (8/10) |  | 7h | 2019-01-25 09:00 A | 2019-01-25 18:00 A |  | 100% |  | 2019-01-25 09:00 | 2019-01-25 18:00 | 7h |  |  |  | Todos [4%] | 0.28h | 0.28h |  |  |  |  | 7 h | 4 h |
| 201 | 7.1.6 | [v2]Diseño e implementacion b.componentes 8 |  | 10h | 2019-01-25 09:00 A | 2019-01-28 11:00 A |  | 100% |  | 2019-01-25 09:00 | 2019-01-28 11:00 | 10h |  |  | start no earlier than 2019-01-07 09:00 | Todos [4%] | 0.4h | 0.4h |  |  |  |  | 10 h | 13 h |
| 202 | 7.1.7 | [V1]Sistema de depuración visual in-game de la IA |  | 50h | 2019-01-25 09:00 | 2019-02-04 11:00 |  |  |  | 2019-01-25 09:00 | 2019-02-04 11:00 | 50h | 36.75d |  | start no earlier than 2019-01-17 09:00 | David Ramón Sevilla [4%]; Jose Vicente Anton Coy [4%]; Marines Ánton Castelló [4%]; Débora Galdeano González [4%] | 8h |  | 155.04 | 155.04 |  | Todos | 6 h | 0h |
| 203 | 7.1.8 | [TDS]Resto de la biblioteca (máx. 1/3), cuesheet y metadatos finales |  | 4h | 2019-01-25 09:00 A | 2019-01-25 13:00 A |  | 100% |  | 2019-01-25 09:00 | 2019-01-25 13:00 | 4h |  |  |  | David Ramón Sevilla [10%] | 2h | 2h | 37.8 | 37.8 | 37.8 |  | 4 h | 5 h |
| 204 | 7.1.9 | [TAG]Aprendizaje OpenGL |  | 30h | 2019-01-28 09:00 A | 2019-01-31 17:00 |  | 75% | 7.5h | 2019-01-28 09:00 | 2019-01-31 17:00 | 30h | 38.25d |  | start no earlier than 2019-01-28 09:00 | Jose Vicente Anton Coy [20%]; Jose Ramon Barea Cecilia [10%] | 9h | 6.75h | 173.6 | 173.6 | 131.6 |  | 10 h | 22,1 h |
| 205 | 7.1.10 | [PD]Making of juego/proyecto |  | 40h | 2019-01-25 09:00 | 2019-01-31 19:00 |  |  |  | 2019-01-25 09:00 | 2019-01-31 19:00 | 40h | 38d |  |  | David Ramón Sevilla [20%]; Marines Ánton Castelló [10%]; María Sánchez Marqués [10%] | 16h |  | 303.4 | 303.4 |  |  | 4 h | 0h |
| 206 | 7.1.11 | [V1]Sistema de depuración visual in-game de la IA |  | 50h | 2019-01-28 09:00 | 2019-02-05 11:00 |  |  |  | 2019-01-28 09:00 | 2019-02-05 11:00 | 50h | 35.75d |  | start no earlier than 2019-01-28 09:00 | Marines Ánton Castelló [10%]; Jose Vicente Anton Coy [10%]; David Ramón Sevilla [10%] | 15h |  | 275.4 | 275.4 |  |  | 6 h | 0h |
| 207 | 7.1.12 | [RV]Modelado de los personajes |  | 120h | 2019-01-25 09:00 A | 2019-02-14 19:00 |  | 25% | 90h | 2019-01-25 09:00 | 2019-02-14 19:00 | 120h | 28d |  |  | Débora Galdeano González [10%]; María Sánchez Marqués [10%]; Marines Ánton Castelló [10%] | 31.5h | 9h | 627 | 627 | 186 |  | 32 h | 31 h |
| 208 | 7.1.13 | [v2]Power-ups y elementos adicionales |  | 28h | 2019-01-28 09:00 A | 2019-01-31 13:00 |  | 75% | 7h | 2019-01-28 09:00 | 2019-01-31 13:00 | 28h | 38.5d |  | start no earlier than 2019-01-28 09:00 | Débora Galdeano González [10%]; David Ramón Sevilla [10%] | 5.6h | 4.2h | 116 | 116 | 88 |  | 5 h | 18 h |
| 209 | 7.1.14 | [V2]Implementación de menús |  | 35h | 2019-01-25 09:00 A | 2019-01-31 12:00 |  | 25% | 26.25h | 2019-01-25 09:00 | 2019-01-31 12:00 | 35h | 38.62d |  | start no earlier than 2019-01-14 09:00 | Jose Vicente Anton Coy [5%]; David Ramón Sevilla [10%] | 5.25h | 1.31h | 97.2 | 97.2 | 26.32 | Jose ramon | 7 h | 11 h |
| 210 | 7.1.15 | [PM]Comparar la planificación prevista y real en Project hito 3 |  | 6h | 2019-02-04 09:00 A | 2019-02-04 17:00 A |  | 100% |  | 2019-02-04 09:00 | 2019-02-04 17:00 | 6h |  |  | start no earlier than 2019-02-04 09:00 | Jose Ramon Barea Cecilia [20%] | 1.2h | 1.2h | 28 | 28 | 28 |  | 6 h | 3 h |
| 211 | 7.1.16 | [PM]Confeccionar Informes de iteración e informe resumen de Hito 3 |  | 6h | 2019-02-04 09:00 A | 2019-02-04 17:00 A |  | 100% |  | 2019-02-04 09:00 | 2019-02-04 17:00 | 6h |  |  | start no earlier than 2019-02-04 09:00 | María Sánchez Marqués [10%]; Jose Ramon Barea Cecilia [5%] | 0.9h | 0.9h | 21 | 21 | 21 |  | 6 h | 6 h |

Notes:
- 190: El tiempo ocupado en esta tarea se puede repartir posteriormente en el hito 3 entre las tareas de estructura basica de TAG
- 202: crear nueva tarea
- 209: Crear nueva tarea

| ID | WBS | Task | Duration | Start | Finish | Baseline start | Baseline finish | Baseline duration | Total slack | Constraint | Resources | Work | Cost | Baseline cost | Horas Estimadas |
| --- | --- | --- | --- | --- | --- | --- | --- | --- | --- | --- | --- | --- | --- | --- | --- |
| 212 | 7.2 | **Iteracion 10** | 8.62d | 2019-02-07 09:00 | 2019-02-19 16:00 | 2019-02-07 09:00 | 2019-02-19 16:00 | 8.62d | 25.38d | start no earlier than 2019-02-06 09:00 |  | 71.48h | 1,524.7 | 1,524.7 |  |
| 213 | 7.2.1 | [PM]Detallar plan de iteracion 10. Creación Subtareas y precedencias en Project | 2.4h | 2019-02-07 09:00 | 2019-02-07 11:24 | 2019-02-07 09:00 | 2019-02-07 11:24 | 2.4h | 33.7d | start no earlier than 2019-02-07 09:00 | Jose Ramon Barea Cecilia [10%] | 0.24h | 6.8 | 6.8 |  |
| 214 | 7.2.2 | [PM]Detallar plan de iteracion 10 Asignar recursos a las tareas en Project | 2.4h | 2019-02-07 09:00 | 2019-02-07 11:24 | 2019-02-07 09:00 | 2019-02-07 11:24 | 2.4h | 33.7d | start no earlier than 2019-02-07 09:00 | Jose Ramon Barea Cecilia [10%] | 0.24h | 6.8 | 6.8 |  |
| 215 | 7.2.3 | [PM]Registrar tiempos y % de realización de tareas en Project | 48min | 2019-02-07 09:00 | 2019-02-07 09:48 | 2019-02-07 09:00 | 2019-02-07 09:48 | 48min | 33.9d | start no earlier than 2019-02-07 09:00 | Todos | 0.8h |  |  |  |
| 216 | 7.2.4 | [general] Mejoras estructura del codigo | 2h | 2019-02-08 09:00 | 2019-02-08 11:00 | 2019-02-08 09:00 | 2019-02-08 11:00 | 2h | 32.75d | start no earlier than 2019-02-08 09:00 | Marines Ánton Castelló [20%]; Débora Galdeano González [20%] | 0.8h | 24 | 24 | 2 h |
| 217 | 7.2.5 | [RV]Modelado de los personajes (2/4) | 30h | 2019-02-08 09:00 | 2019-02-13 17:00 | 2019-02-08 09:00 | 2019-02-13 17:00 | 30h | 29.25d | start no earlier than 2019-02-08 09:00 | María Sánchez Marqués [60%]; Jose Ramon Barea Cecilia [10%] | 21h | 434 | 434 |  |
| 218 | 7.2.6 | [RV]Modelado del entorno y elementos | 10h | 2019-02-08 09:00 | 2019-02-11 11:00 | 2019-02-08 09:00 | 2019-02-11 11:00 | 10h | 31.75d | start no earlier than 2019-02-08 09:00 | Jose Ramon Barea Cecilia [10%] | 1h | 22 | 22 |  |
| 219 | 7.2.7 | [V2]Diseño e implementación b.objetos (9/10) | 7h | 2019-02-12 09:00 | 2019-02-12 18:00 | 2019-02-12 09:00 | 2019-02-12 18:00 | 7h | 30.12d | start no earlier than 2019-02-12 09:00 | Jose Ramon Barea Cecilia [10%]; Marines Ánton Castelló [10%]; Débora Galdeano González [10%]; David Ramón Sevilla [10%]; Jose Vicente Anton Coy [10%] | 3.5h | 76.8 | 76.8 |  |
| 220 | 7.2.8 | [v2]Diseño e implementacion b.componentes 9 | 10h | 2019-02-12 09:00 | 2019-02-13 11:00 | 2019-02-12 09:00 | 2019-02-13 11:00 | 10h | 29.75d | start no earlier than 2019-02-12 09:00 | David Ramón Sevilla [10%]; Débora Galdeano González [10%]; Jose Ramon Barea Cecilia [10%]; Jose Vicente Anton Coy [10%]; Marines Ánton Castelló [10%] | 5h | 105.6 | 105.6 |  |
| 221 | 7.2.9 | [V1]Sistema de depuración visual in-game de la IA | 12h | 2019-02-08 09:00 | 2019-02-11 13:00 | 2019-02-08 09:00 | 2019-02-11 13:00 | 12h | 31.5d | start no earlier than 2019-02-08 09:00 | Débora Galdeano González [20%]; Marines Ánton Castelló [20%] | 4.8h | 104 | 104 |  |
| 222 | 7.2.10 | [v1]Sistema de control de movimiento con Steering Behaviours | 7h | 2019-02-13 09:00 | 2019-02-13 18:00 | 2019-02-13 09:00 | 2019-02-13 18:00 | 7h | 29.12d | start no earlier than 2019-02-13 09:00 | Débora Galdeano González [20%]; Marines Ánton Castelló [20%] | 2.8h | 64 | 64 |  |
| 223 | 7.2.11 | [v2]Power-ups y elementos adicionales | 7h | 2019-02-13 09:00 | 2019-02-13 18:00 | 2019-02-13 09:00 | 2019-02-13 18:00 | 7h | 29.12d | start no earlier than 2019-02-13 09:00 | Débora Galdeano González [20%]; Marines Ánton Castelló [20%]; David Ramón Sevilla [20%] | 4.2h | 92.8 | 92.8 |  |
| 224 | 7.2.12 | [v1]Gestión de recursos de IA con Level-of-Detail (LoD) | 10h | 2019-02-08 09:00 | 2019-02-11 11:00 | 2019-02-08 09:00 | 2019-02-11 11:00 | 10h | 31.75d | start no earlier than 2019-02-08 09:00 | Débora Galdeano González [20%]; Marines Ánton Castelló [20%]; David Ramón Sevilla [20%] | 6h | 127.6 | 127.6 |  |
| 225 | 7.2.13 | [v2]Implementación de un sistema multi-cámara | 2h | 2019-02-15 09:00 | 2019-02-15 11:00 | 2019-02-15 09:00 | 2019-02-15 11:00 | 2h | 27.75d | start no earlier than 2019-02-15 09:00 | Débora Galdeano González [10%]; Jose Ramon Barea Cecilia [10%] | 0.4h | 12.6 | 12.6 |  |
| 226 | 7.2.14 | [v2]Uso de sistema de depuración visual de las físicas | 5h | 2019-02-18 09:00 | 2019-02-18 16:00 | 2019-02-18 09:00 | 2019-02-18 16:00 | 5h | 26.38d | start no earlier than 2019-02-16 09:00 | Débora Galdeano González [10%]; Jose Ramon Barea Cecilia [10%]; Jose Vicente Anton Coy [10%] | 1.5h | 36 | 36 |  |
| 227 | 7.2.15 | [TAG]Estructura básica del nodo | 7h | 2019-02-08 09:00 | 2019-02-08 18:00 | 2019-02-08 09:00 | 2019-02-08 18:00 | 7h | 32.12d | start no earlier than 2019-02-08 09:00 | Jose Ramon Barea Cecilia [10%]; Jose Vicente Anton Coy [20%]; David Ramón Sevilla [10%] | 2.8h | 59.2 | 59.2 |  |
| 228 | 7.2.16 | [TAG ]Recorrido dibujado del arbol | 7h | 2019-02-18 09:00 | 2019-02-18 18:00 | 2019-02-18 09:00 | 2019-02-18 18:00 | 7h | 26.12d | start no earlier than 2019-02-16 09:00 | Jose Ramon Barea Cecilia [10%]; Jose Vicente Anton Coy [20%]; David Ramón Sevilla [10%] | 2.8h | 59.2 | 59.2 |  |
| 229 | 7.2.17 | [TAG]Estructura básica de la entidad (Constructor, destructor, funciones… todas virtuales, vacías) | 7h | 2019-02-18 09:00 | 2019-02-18 18:00 | 2019-02-18 09:00 | 2019-02-18 18:00 | 7h | 26.12d | start no earlier than 2019-02-16 09:00 | Jose Ramon Barea Cecilia [10%]; Jose Vicente Anton Coy [20%]; David Ramón Sevilla [10%] | 2.8h | 59.2 | 59.2 |  |
| 230 | 7.2.18 | [TAG]Matrices (model, view, projection) y pila estáticas y su manejo | 4h | 2019-02-18 09:00 | 2019-02-18 13:00 | 2019-02-18 09:00 | 2019-02-18 13:00 | 4h | 26.5d | start no earlier than 2019-02-17 09:00 | David Ramón Sevilla [10%]; Jose Ramon Barea Cecilia [10%]; Jose Vicente Anton Coy [20%] | 1.6h | 37 | 37 |  |
| 231 | 7.2.19 | [TAG]Estructura básica de la transformación (Constructor, destructor, matriz transformación…) | 4.5h | 2019-02-18 09:00 | 2019-02-18 15:30 | 2019-02-18 09:00 | 2019-02-18 15:30 | 4.5h | 26.44d | start no earlier than 2019-02-16 09:00 | David Ramón Sevilla [10%]; Jose Ramon Barea Cecilia [10%]; Jose Vicente Anton Coy [20%] | 1.8h | 40.7 | 40.7 |  |
| 232 | 7.2.20 | [TDS]Resto de la biblioteca (máx. 1/3), cuesheet y metadatos finales | 4h | 2019-02-08 09:00 | 2019-02-08 13:00 | 2019-02-08 09:00 | 2019-02-08 13:00 | 4h | 32.5d | start no earlier than 2019-02-08 09:00 | David Ramón Sevilla [20%] | 0.8h | 18 | 18 |  |
| 233 | 7.2.21 | [PD]Making of juego/proyecto (1/3) | 13h | 2019-02-18 09:00 | 2019-02-19 16:00 | 2019-02-18 09:00 | 2019-02-19 16:00 | 13h | 25.38d | start no earlier than 2019-02-18 09:00 | David Ramón Sevilla [15%]; Marines Ánton Castelló [15%]; Jose Vicente Anton Coy [15%] | 5.85h | 113.4 | 113.4 |  |
| 234 | 7.2.22 | [PM]Comparar la planificación prevista y real en Project hito 3 | 1.5h | 2019-02-19 09:00 | 2019-02-19 10:30 | 2019-02-19 09:00 | 2019-02-19 10:30 | 1.5h | 25.81d | start no earlier than 2019-02-19 09:00 | Jose Ramon Barea Cecilia [20%] | 0.3h | 10 | 10 |  |
| 235 | 7.2.23 | [PM]Confeccionar Informes de iteración e informe resumen de Hito 3 | 1.5h | 2019-02-19 09:00 | 2019-02-19 10:30 | 2019-02-19 09:00 | 2019-02-19 10:30 | 1.5h | 25.81d | start no earlier than 2019-02-19 09:00 | María Sánchez Marqués [20%]; Jose Ramon Barea Cecilia [10%] | 0.45h | 15 | 15 |  |

| ID | WBS | Task | Type | Duration | Start | Finish | Predecessors | Baseline start | Baseline finish | Baseline duration | Total slack | Constraint |
| --- | --- | --- | --- | --- | --- | --- | --- | --- | --- | --- | --- | --- |
| 236 | 7.3 | **Iteracion 11** |  | 1.25d? | 2019-02-20 09:00 | 2019-02-21 11:00 |  | 2019-02-20 09:00 | 2019-02-21 11:00 | 1.25d? | 23.75d | start no earlier than 2019-02-20 09:00 |
| 237 | 7.3.1 | [V2]Diseño e implementación b.objetos (final) |  | 7h | 2019-02-20 09:00 | 2019-02-20 18:00 |  | 2019-02-20 09:00 | 2019-02-20 18:00 | 7h | 24.12d |  |
| 238 | 7.3.2 | [v2]Diseño e implementacion b.componentes (final) |  | 10h | 2019-02-20 09:00 | 2019-02-21 11:00 |  | 2019-02-20 09:00 | 2019-02-21 11:00 | 10h | 23.75d | start no earlier than 2019-02-04 09:00 |
| 239 | 7.3.3 | <Tarea nueva> |  | 1d? | 2019-02-20 09:00 | 2019-02-20 19:00 |  | 2019-02-20 09:00 | 2019-02-20 19:00 | 1d? | 24d |  |
| 240 | 7.4 | **Iteracion 12** |  | 1d? | 2019-03-06 09:00 | 2019-03-06 19:00 |  | 2019-03-06 09:00 | 2019-03-06 19:00 | 1d? | 14d | start no earlier than 2019-03-06 09:00 |
| 241 | 7.4.1 | <Tarea nueva> |  | 1d? | 2019-03-06 09:00 | 2019-03-06 19:00 |  | 2019-03-06 09:00 | 2019-03-06 19:00 | 1d? | 14d |  |
| 242 | 7.5 | [PM]Detallar plan iteraciones del mes de Febrero-Marzo. Creación Subtareas y precedencias en Project |  | 1d | 2019-01-24 09:00 | 2019-01-24 19:00 |  | 2019-01-24 09:00 | 2019-01-24 19:00 | 1d | 43d | start no earlier than 2019-01-24 09:00 |
| 243 | 7.6 | [PM]Detallar plan iteraciones del mes de Febrero-Marzo Asignar recursos a las tareas en Project |  | 1d? | 2019-01-24 09:00 | 2019-01-24 19:00 |  | 2019-01-24 09:00 | 2019-01-24 19:00 | 1d? | 43d | start no earlier than 2019-01-24 09:00 |
| 244 | 7.7 | [PM]Registrar tiempos y % de realización de tareas en Project |  | 1d? | 2019-01-24 09:00 | 2019-01-24 19:00 |  | 2019-01-24 09:00 | 2019-01-24 19:00 | 1d? | 43d | start no earlier than 2019-01-24 09:00 |
| 245 | 7.8 | [PM]Comparar la planificación prevista y real en Project hito 3 |  | 1d? | 2019-01-24 09:00 | 2019-01-24 19:00 |  | 2019-01-24 09:00 | 2019-01-24 19:00 | 1d? | 43d | start no earlier than 2019-01-24 09:00 |
| 246 | 7.9 | [PM]Confeccionar Informes de iteración e informe resumen de Hito 3 |  | 1d? | 2019-01-24 09:00 | 2019-01-24 19:00 |  | 2019-01-24 09:00 | 2019-01-24 19:00 | 1d? | 43d | start no earlier than 2019-01-24 09:00 |
| 247 | 7.10 | [PM]Elaborar la presentación del Hito 3 |  | 1d? | 2019-01-24 09:00 | 2019-01-24 19:00 |  | 2019-01-24 09:00 | 2019-01-24 19:00 | 1d? | 43d | start no earlier than 2019-01-24 09:00 |
| 248 | 7.11 | [PM]Exponer la presentación del Hito 3 |  | 1d? | 2019-01-24 09:00 | 2019-01-24 19:00 |  | 2019-01-24 09:00 | 2019-01-24 19:00 | 1d? | 43d | start no earlier than 2019-01-24 09:00 |
| 249 | 7.12 | [TAG]Estructura básica del nodo (array de hijos, puntero a padre, puntero a entidad, funcionalidad básica -constructor, destructor, gets, sets, manejo de hijos….) |  | 1d? | 2019-01-24 09:00 | 2019-01-24 19:00 |  | 2019-01-24 09:00 | 2019-01-24 19:00 | 1d? | 43d | start no earlier than 2019-01-24 09:00 |
| 250 | 7.13 | [TAG]Recorrido-dibujado del árbol |  | 1d? | 2019-01-24 09:00 | 2019-01-24 19:00 |  | 2019-01-24 09:00 | 2019-01-24 19:00 | 1d? | 43d | start no earlier than 2019-01-24 09:00 |
| 251 | 7.14 | [TAG]Estructura básica de la entidad (Constructor, destructor, funciones… todas virtuales, vacías) |  | 1d | 2019-01-24 09:00 | 2019-01-24 19:00 |  | 2019-01-24 09:00 | 2019-01-24 19:00 | 1d | 43d | start no earlier than 2019-01-24 09:00 |
| 252 | 7.15 | [TAG]Matrices (model, view, projection) y pila estáticas y su manejo |  | 1d? | 2019-01-24 09:00 | 2019-01-24 19:00 |  | 2019-01-24 09:00 | 2019-01-24 19:00 | 1d? | 43d | start no earlier than 2019-01-24 09:00 |
| 253 | 7.16 | [TAG]Estructura básica de la transformación (Constructor, destructor, matriz transformación…) |  | 1d? | 2019-01-24 09:00 | 2019-01-24 19:00 |  | 2019-01-24 09:00 | 2019-01-24 19:00 | 1d? | 43d | start no earlier than 2019-01-24 09:00 |
| 254 | 7.17 | [TAG]Operaciones de transformación (trasladar, rotar, escalar, identidad, trasponer, invertir, todas con GLM o GLMatrix) |  | 1d? | 2019-01-24 09:00 | 2019-01-24 19:00 |  | 2019-01-24 09:00 | 2019-01-24 19:00 | 1d? | 43d | start no earlier than 2019-01-24 09:00 |
| 255 | 7.18 | [TAG]Dibujado (begindraw, enddraw, manejo pila y matriz model) |  | 1d? | 2019-01-24 09:00 | 2019-01-24 19:00 |  | 2019-01-24 09:00 | 2019-01-24 19:00 | 1d? | 43d | start no earlier than 2019-01-24 09:00 |
| 256 | 7.19 | [TAG]Estructura básica de la cámara (Constructor, destructor, matriz proyección) |  | 1d? | 2019-01-24 09:00 | 2019-01-24 19:00 |  | 2019-01-24 09:00 | 2019-01-24 19:00 | 1d? | 43d | start no earlier than 2019-01-24 09:00 |
| 257 | 7.20 | [TAG]Rellenar matriz perspectiva (con GLM o GLMatrix) |  | 1d | 2019-01-24 09:00 | 2019-01-24 19:00 |  | 2019-01-24 09:00 | 2019-01-24 19:00 | 1d | 43d | start no earlier than 2019-01-24 09:00 |
| 258 | 7.21 | [TAG]Estructura básica de la luz (Constructor, destructor) |  | 1d? | 2019-01-24 09:00 | 2019-01-24 19:00 |  | 2019-01-24 09:00 | 2019-01-24 19:00 | 1d? | 43d | start no earlier than 2019-01-24 09:00 |
| 259 | 7.22 | [TAG]Datos y funciones luz puntual |  | 1d? | 2019-01-24 09:00 | 2019-01-24 19:00 |  | 2019-01-24 09:00 | 2019-01-24 19:00 | 1d? | 43d | start no earlier than 2019-01-24 09:00 |
| 260 | 7.23 | [TAG]Estructura básica de la malla (Constructor, destructor) |  | 1d? | 2019-01-24 09:00 | 2019-01-24 19:00 |  | 2019-01-24 09:00 | 2019-01-24 19:00 | 1d? | 43d | start no earlier than 2019-01-24 09:00 |
| 261 | 7.24 | [TAG]Datos de mallas, texturas, materiales… (llamadas al gestor de recursos) |  | 1d? | 2019-01-24 09:00 | 2019-01-24 19:00 |  | 2019-01-24 09:00 | 2019-01-24 19:00 | 1d? | 43d | start no earlier than 2019-01-24 09:00 |
| 262 | 7.25 | [TAG]Dibujado de mallas (begindraw, enddraw, matriz model…) |  | 1d? | 2019-01-24 09:00 | 2019-01-24 19:00 |  | 2019-01-24 09:00 | 2019-01-24 19:00 | 1d? | 43d | start no earlier than 2019-01-24 09:00 |
| 263 | 7.26 | [TAG]Estructura básica del gestor de recursos (constructor, destructor, vectores de recursos) |  | 1d? | 2019-01-24 09:00 | 2019-01-24 19:00 |  | 2019-01-24 09:00 | 2019-01-24 19:00 | 1d? | 43d | start no earlier than 2019-01-24 09:00 |
| 264 | 7.27 | [TAG]Obtener recurso (gestión adecuada de memoria) |  | 1d? | 2019-01-24 09:00 | 2019-01-24 19:00 |  | 2019-01-24 09:00 | 2019-01-24 19:00 | 1d? | 43d | start no earlier than 2019-01-24 09:00 |
| 265 | 7.28 | [TAG]Estructura básica del recurso (constructor, destructor. Es virtual, vacío) |  | 1d? | 2019-01-24 09:00 | 2019-01-24 19:00 |  | 2019-01-24 09:00 | 2019-01-24 19:00 | 1d? | 43d | start no earlier than 2019-01-24 09:00 |
| 266 | 7.29 | [TAG]Estructura básica de la malla (constructor, destructor) |  | 1d? | 2019-01-24 09:00 | 2019-01-24 19:00 |  | 2019-01-24 09:00 | 2019-01-24 19:00 | 1d? | 43d | start no earlier than 2019-01-24 09:00 |
| 267 | 7.30 | [TAG]Lectura de disco (con assimp) |  | 1d? | 2019-01-24 09:00 | 2019-01-24 19:00 |  | 2019-01-24 09:00 | 2019-01-24 19:00 | 1d? | 43d | start no earlier than 2019-01-24 09:00 |
| 268 | 7.31 | [TAG]Creación de buffers de vértices, normales, índices… y relleno |  | 1d? | 2019-01-24 09:00 | 2019-01-24 19:00 |  | 2019-01-24 09:00 | 2019-01-24 19:00 | 1d? | 43d | start no earlier than 2019-01-24 09:00 |
| 269 | 7.32 | [TAG]Dibujado de las mallas (draw, con paso de los buffers a OpenGL o WebGL) |  | 1d? | 2019-01-24 09:00 | 2019-01-24 19:00 |  | 2019-01-24 09:00 | 2019-01-24 19:00 | 1d? | 43d | start no earlier than 2019-01-24 09:00 |
| 270 | 7.33 | [TAG]Estructura básica del material (constructor, destructor) |  | 1d? | 2019-01-24 09:00 | 2019-01-24 19:00 |  | 2019-01-24 09:00 | 2019-01-24 19:00 | 1d? | 43d | start no earlier than 2019-01-24 09:00 |
| 271 | 7.34 | [TAG]Leer material de disco (con librería o con parser propio) y rellenar valores |  | 1d? | 2019-01-24 09:00 | 2019-01-24 19:00 |  | 2019-01-24 09:00 | 2019-01-24 19:00 | 1d? | 43d | start no earlier than 2019-01-24 09:00 |
| 272 | 7.35 | [TAG]Dibujado de los materiales (preparar los materiales y cargarlos en OpenGL o WebGL) |  | 1d? | 2019-01-24 09:00 | 2019-01-24 19:00 |  | 2019-01-24 09:00 | 2019-01-24 19:00 | 1d? | 43d | start no earlier than 2019-01-24 09:00 |
| 273 | 7.36 | [TAG]Estructura básica del shader (constructor, destructor) |  | 1d? | 2019-01-24 09:00 | 2019-01-24 19:00 |  | 2019-01-24 09:00 | 2019-01-24 19:00 | 1d? | 43d | start no earlier than 2019-01-24 09:00 |
| 274 | 7.37 | [TAG]Lectura de shaders de disco (con parser propio) y guardarlo |  | 1d? | 2019-01-24 09:00 | 2019-01-24 19:00 |  | 2019-01-24 09:00 | 2019-01-24 19:00 | 1d? | 43d | start no earlier than 2019-01-24 09:00 |
| 275 | 7.38 | [TAG]Estructura básica de la interfaz (constructor, destructor, inicialización motor y openGL) |  | 1d? | 2019-01-24 09:00 | 2019-01-24 19:00 |  | 2019-01-24 09:00 | 2019-01-24 19:00 | 1d? | 43d | start no earlier than 2019-01-24 09:00 |
| 276 | 7.39 | [TAG]Funciones para crear cámaras y gestionarlas (manejo de las cámaras, registro, cálculo de la matriz view) |  | 1d? | 2019-01-24 09:00 | 2019-01-24 19:00 |  | 2019-01-24 09:00 | 2019-01-24 19:00 | 1d? | 43d | start no earlier than 2019-01-24 09:00 |
| 277 | 7.40 | [TAG]Funciones para crear luces y gestionarlas (manejo de las luces registro, cálculo de la matriz light) |  | 1d? | 2019-01-24 09:00 | 2019-01-24 19:00 |  | 2019-01-24 09:00 | 2019-01-24 19:00 | 1d? | 43d | start no earlier than 2019-01-24 09:00 |
| 278 | 7.41 | [TAG]Funciones para crear transformaciones (creación de varios nodos con las transformaciones, manejo de las transformaciones) |  | 1d? | 2019-01-24 09:00 | 2019-01-24 19:00 |  | 2019-01-24 09:00 | 2019-01-24 19:00 | 1d? | 43d | start no earlier than 2019-01-24 09:00 |
| 279 | 7.42 | [TAG]Funciones para crear mallas y animaciones |  | 1d? | 2019-01-24 09:00 | 2019-01-24 19:00 |  | 2019-01-24 09:00 | 2019-01-24 19:00 | 1d? | 43d | start no earlier than 2019-01-24 09:00 |
| 280 | 7.43 | [TAG]Funciones para crear shaders y gestionarlos |  | 1d? | 2019-01-24 09:00 | 2019-01-24 19:00 |  | 2019-01-24 09:00 | 2019-01-24 19:00 | 1d? | 43d | start no earlier than 2019-01-24 09:00 |
| 281 | 7.44 | [TAG]Shader básico (Sombreado de Phong, reflexión de Phong) con materiales |  | 1d? | 2019-01-24 09:00 | 2019-01-24 19:00 |  | 2019-01-24 09:00 | 2019-01-24 19:00 | 1d? | 43d | start no earlier than 2019-01-24 09:00 |
| 282 | 7.45 | [TAG]Integración con la aplicación |  | 1d? | 2019-01-24 09:00 | 2019-01-24 19:00 |  | 2019-01-24 09:00 | 2019-01-24 19:00 | 1d? | 43d | start no earlier than 2019-01-24 09:00 |
| 283 | 7.46 | [TAG]Realización de una fachada entre el motor y la aplicación o videojuego |  | 1d? | 2019-01-24 09:00 | 2019-01-24 19:00 |  | 2019-01-24 09:00 | 2019-01-24 19:00 | 1d? | 43d | start no earlier than 2019-01-24 09:00 |
| 284 | 7.47 | [TAG]Librería matemática (GLM o GLMatrix) |  | 1d? | 2019-01-24 09:00 | 2019-01-24 19:00 |  | 2019-01-24 09:00 | 2019-01-24 19:00 | 1d? | 43d | start no earlier than 2019-01-24 09:00 |
| 285 | 7.48 | [TAG][Solo CED] Librería de lectura de mallas (assimp…) |  | 1d? | 2019-01-24 09:00 | 2019-01-24 19:00 |  | 2019-01-24 09:00 | 2019-01-24 19:00 | 1d? | 43d | start no earlier than 2019-01-24 09:00 |
| 286 | 7.49 | [TAG][Solo CED] Librería de ventanas, entrada/salida... (GLFW…) |  | 1d? | 2019-01-24 09:00 | 2019-01-24 19:00 |  | 2019-01-24 09:00 | 2019-01-24 19:00 | 1d? | 43d | start no earlier than 2019-01-24 09:00 |
| 287 | 7.50 | [V1]Flocking: comportamiento grupal emergente |  | 1d | 2019-01-24 09:00 | 2019-01-24 19:00 |  | 2019-01-24 09:00 | 2019-01-24 19:00 | 1d | 43d | start no earlier than 2019-01-24 09:00 |
| 288 | 7.51 | [V1]Editor in-game de parámetros y comportamientos de la IA |  | 1d | 2019-01-24 09:00 | 2019-01-24 19:00 |  | 2019-01-24 09:00 | 2019-01-24 19:00 | 1d | 43d | start no earlier than 2019-01-24 09:00 |
| 289 | 7.52 | [V1]Sistema de logros y puntuaciones web |  | 1d | 2019-01-24 09:00 | 2019-01-24 19:00 |  | 2019-01-24 09:00 | 2019-01-24 19:00 | 1d | 43d | start no earlier than 2019-01-24 09:00 |
| 290 | 7.53 | [V2]Implementación de cesped y vegetación |  | 1d | 2019-01-24 09:00 | 2019-01-24 19:00 |  | 2019-01-24 09:00 | 2019-01-24 19:00 | 1d | 43d | start no earlier than 2019-01-24 09:00 |
| 291 | 7.54 | [V2]Implementación de nubes |  | 1d | 2019-01-24 09:00 | 2019-01-24 19:00 |  | 2019-01-24 09:00 | 2019-01-24 19:00 | 1d | 43d | start no earlier than 2019-01-24 09:00 |
| 292 | 7.55 | [V2]Implementación de sistemas de partículas |  | 1d | 2019-01-24 09:00 | 2019-01-24 19:00 |  | 2019-01-24 09:00 | 2019-01-24 19:00 | 1d | 43d | start no earlier than 2019-01-24 09:00 |
| 293 | 7.56 | [TDS]Resto de la biblioteca (máx. 1/3), cuesheet y metadatos finales |  | 1d | 2019-01-24 09:00 | 2019-01-24 19:00 |  | 2019-01-24 09:00 | 2019-01-24 19:00 | 1d | 43d | start no earlier than 2019-01-24 09:00 |
| 294 | 7.57 | <Tarea nueva> |  | 1d? | 2019-01-24 09:00 | 2019-01-24 19:00 |  | 2019-01-24 09:00 | 2019-01-24 19:00 | 1d? | 43d | start no earlier than 2019-01-24 09:00 |
| 295 | 8 | Versión Producción - Lista para pulir | milestone | 0d | 2019-03-06 19:00 | 2019-03-06 19:00 | 194 | 2019-03-06 19:00 | 2019-03-06 19:00 | 0d | 43d | start no earlier than 2019-03-06 09:00 |

| ID | WBS | Task | Type | Duration | Start | Finish | Predecessors | Baseline start | Baseline finish | Baseline duration | Total slack | Constraint |
| --- | --- | --- | --- | --- | --- | --- | --- | --- | --- | --- | --- | --- |
| 296 | 9 | **hito 4** |  | 29d? | 2019-03-27 09:00 | 2019-05-06 19:00 |  | 2019-03-27 09:00 | 2019-05-06 19:00 | 29d? | 0d | finish no later than 2019-05-23 19:00 |
| 297 | 9.1 | **Iteracion 13** |  | 1d? | 2019-03-27 09:00 | 2019-03-27 19:00 |  | 2019-03-27 09:00 | 2019-03-27 19:00 | 1d? | 28d | start no earlier than 2019-03-27 09:00 |
| 298 | 9.1.1 | <Tarea nueva> |  | 1d? | 2019-03-27 09:00 | 2019-03-27 19:00 |  | 2019-03-27 09:00 | 2019-03-27 19:00 | 1d? | 28d |  |
| 299 | 9.2 | **Semana santa** |  | 1d? | 2019-04-17 09:00 | 2019-04-17 19:00 |  | 2019-04-17 09:00 | 2019-04-17 19:00 | 1d? | 13d | start no earlier than 2019-04-17 09:00 |
| 300 | 9.2.1 | <Tarea nueva> |  | 1d? | 2019-04-17 09:00 | 2019-04-17 19:00 |  | 2019-04-17 09:00 | 2019-04-17 19:00 | 1d? | 13d |  |
| 301 | 9.3 | **Iteracion 14** |  | 1d? | 2019-05-06 09:00 | 2019-05-06 19:00 |  | 2019-05-06 09:00 | 2019-05-06 19:00 | 1d? | 0d | start no earlier than 2019-05-05 09:00 |
| 302 | 9.3.1 | <Tarea nueva> |  | 1d? | 2019-05-06 09:00 | 2019-05-06 19:00 |  | 2019-05-06 09:00 | 2019-05-06 19:00 | 1d? | 0d |  |
| 303 | 9.4 | [PM]Detallar plan iteraciones del mes de Abril-Mayo. Creación Subtareas y precedencias en Project |  | 1d | 2019-03-27 09:00 | 2019-03-27 19:00 |  | 2019-03-27 09:00 | 2019-03-27 19:00 | 1d | 28d | start no earlier than 2019-03-27 09:00 |
| 304 | 9.5 | [PM]Detallar plan iteraciones del mes de Abril-Mayo. Asignar recursos a las tareas en Project |  | 1d? | 2019-03-27 09:00 | 2019-03-27 19:00 |  | 2019-03-27 09:00 | 2019-03-27 19:00 | 1d? | 28d | start no earlier than 2019-03-27 09:00 |
| 305 | 9.6 | [PM]Registrar tiempos y % de realización de tareas en Project |  | 1d? | 2019-03-27 09:00 | 2019-03-27 19:00 |  | 2019-03-27 09:00 | 2019-03-27 19:00 | 1d? | 28d | start no earlier than 2019-03-27 09:00 |
| 306 | 9.7 | [PM]Comparar la planificación prevista y real en Project hito 4 |  | 1d? | 2019-03-27 09:00 | 2019-03-27 19:00 |  | 2019-03-27 09:00 | 2019-03-27 19:00 | 1d? | 28d | start no earlier than 2019-03-27 09:00 |
| 307 | 9.8 | [PM]Confeccionar Informes de iteración e informe resumen de Hito 4 |  | 1d? | 2019-03-27 09:00 | 2019-03-27 19:00 |  | 2019-03-27 09:00 | 2019-03-27 19:00 | 1d? | 28d | start no earlier than 2019-03-27 09:00 |
| 308 | 9.9 | [PM]Elaborar la presentación del Hito 4 |  | 1d? | 2019-03-27 09:00 | 2019-03-27 19:00 |  | 2019-03-27 09:00 | 2019-03-27 19:00 | 1d? | 28d | start no earlier than 2019-03-27 09:00 |
| 309 | 9.10 | [PM]Exponer la presentación del Hito 4 |  | 1d? | 2019-03-27 09:00 | 2019-03-27 19:00 |  | 2019-03-27 09:00 | 2019-03-27 19:00 | 1d? | 28d | start no earlier than 2019-03-27 09:00 |
| 310 | 9.11 | [TAG]Estructura básica de la animación (Constructor, destructor) |  | 1d | 2019-03-27 09:00 | 2019-03-27 19:00 |  | 2019-03-27 09:00 | 2019-03-27 19:00 | 1d | 28d | start no earlier than 2019-03-27 09:00 |
| 311 | 9.12 | [TAG]Datos de animaciones, mallas, texturas, materiales (multiples, con llamadas al gestor de recursos) |  | 1d? | 2019-03-27 09:00 | 2019-03-27 19:00 |  | 2019-03-27 09:00 | 2019-03-27 19:00 | 1d? | 28d | start no earlier than 2019-03-27 09:00 |
| 312 | 9.13 | [TAG]Dibujado de texturas (preparar las texturas y cargarlas en OpenGL o WebGL) |  | 1d? | 2019-03-27 09:00 | 2019-03-27 19:00 |  | 2019-03-27 09:00 | 2019-03-27 19:00 | 1d? | 28d | start no earlier than 2019-03-27 09:00 |
| 313 | 9.14 | [TAG]Shader básico (Sombreado de Phong, reflexión de Phong) con materiales y texturas |  | 1d? | 2019-03-27 09:00 | 2019-03-27 19:00 |  | 2019-03-27 09:00 | 2019-03-27 19:00 | 1d? | 28d | start no earlier than 2019-03-27 09:00 |
| 314 | 9.15 | [TAG]Shader Cartoon |  | 1d? | 2019-03-27 09:00 | 2019-03-27 19:00 |  | 2019-03-27 09:00 | 2019-03-27 19:00 | 1d? | 28d | start no earlier than 2019-03-27 09:00 |
| 315 | 9.16 | [TAG]Bounding boxes (incluye retocar nodos, entidades y recursos malla) |  | 1d? | 2019-03-27 09:00 | 2019-03-27 19:00 |  | 2019-03-27 09:00 | 2019-03-27 19:00 | 1d? | 28d | start no earlier than 2019-03-27 09:00 |
| 316 | 9.17 | [TAG]Backface culling |  | 1d? | 2019-03-27 09:00 | 2019-03-27 19:00 |  | 2019-03-27 09:00 | 2019-03-27 19:00 | 1d? | 28d | start no earlier than 2019-03-27 09:00 |
| 317 | 9.18 | [TAG]Frustum culling |  | 1d? | 2019-03-27 09:00 | 2019-03-27 19:00 |  | 2019-03-27 09:00 | 2019-03-27 19:00 | 1d? | 28d | start no earlier than 2019-03-27 09:00 |
| 318 | 9.19 | [TAG]Sombras proyectadas |  | 1d? | 2019-03-27 09:00 | 2019-03-27 19:00 |  | 2019-03-27 09:00 | 2019-03-27 19:00 | 1d? | 28d | start no earlier than 2019-03-27 09:00 |
| 319 | 9.20 | [TAG]Sistema de partículas (sólo la incorporación en el motor) |  | 1d? | 2019-03-27 09:00 | 2019-03-27 19:00 |  | 2019-03-27 09:00 | 2019-03-27 19:00 | 1d? | 28d | start no earlier than 2019-03-27 09:00 |
| 320 | 9.21 | [PD]Créditos |  | 1d | 2019-03-27 09:00 | 2019-03-27 19:00 |  | 2019-03-27 09:00 | 2019-03-27 19:00 | 1d | 28d | start no earlier than 2019-03-27 09:00 |
| 321 | 9.22 | [PD]Vídeo final juego / explicación parte del proyecto |  | 1d | 2019-03-27 09:00 | 2019-03-27 19:00 |  | 2019-03-27 09:00 | 2019-03-27 19:00 | 1d | 28d | start no earlier than 2019-03-27 09:00 |
| 322 | 9.23 | [TDS]Integración de sonido y música en el juego |  | 1d | 2019-03-27 09:00 | 2019-03-27 19:00 |  | 2019-03-27 09:00 | 2019-03-27 19:00 | 1d | 28d | start no earlier than 2019-03-27 09:00 |
| 323 | 9.24 | [TDS]Post producción (mezcla y masterización in-game) |  | 1d | 2019-03-27 09:00 | 2019-03-27 19:00 |  | 2019-03-27 09:00 | 2019-03-27 19:00 | 1d | 28d | start no earlier than 2019-03-27 09:00 |
| 324 | 9.25 | [TDS]Sonido generado proceduralmente in-game |  | 1d | 2019-03-27 09:00 | 2019-03-27 19:00 |  | 2019-03-27 09:00 | 2019-03-27 19:00 | 1d | 28d | start no earlier than 2019-03-27 09:00 |
| 325 | 9.26 | [RV]Rigging de los personajes |  | 1d | 2019-03-27 09:00 | 2019-03-27 19:00 |  | 2019-03-27 09:00 | 2019-03-27 19:00 | 1d | 28d | start no earlier than 2019-03-27 09:00 |
| 326 | 9.27 | [RV]Captura de movimiento |  | 1d | 2019-03-27 09:00 | 2019-03-27 19:00 |  | 2019-03-27 09:00 | 2019-03-27 19:00 | 1d | 28d | start no earlier than 2019-03-27 09:00 |
| 327 | 9.28 | [RV]Animación de los personajes |  | 1d | 2019-03-27 09:00 | 2019-03-27 19:00 |  | 2019-03-27 09:00 | 2019-03-27 19:00 | 1d | 28d | start no earlier than 2019-03-27 09:00 |
| 328 | 9.29 | [RV]Texturizado del entorno y elementos |  | 1d | 2019-03-27 09:00 | 2019-03-27 19:00 |  | 2019-03-27 09:00 | 2019-03-27 19:00 | 1d | 28d | start no earlier than 2019-03-27 09:00 |
| 329 | 10 | Version terminada | milestone | 0d | 2019-05-06 19:00 | 2019-05-06 19:00 | 296 | 2019-05-06 19:00 | 2019-05-06 19:00 | 0d | 0d | start no earlier than 2018-10-24 09:00 |
